# fuclty of arts

Schedule from Primavera P6, 2021-12-01 to 2022-12-20, data date 2021-12-01, costs in USD.
Must finish by 2022-12-01

## Calendars

- Corporate - Standard Full Time: Mon-Fri 08:00-16:00; Sat-Sun off.

## Resources

| Resource | Group | Unit | Rate | Notes |
| --- | --- | --- | --- | --- |
| لودر | equipment |  | 4796 | ï»؟ |
| عامل | labor |  | 350 | ï»؟ |
| دكاك | equipment |  | 3250 | ï»؟ |
| فنى عزل | labor |  | 350 | ï»؟ |
| نجار | labor |  | 325 | ï»؟ |
| مساعد نجار | labor |  | 250 | ï»؟ |
| يوميه البامب | material | يوميه | 12000 | ï»؟ |
| يوميه عربيه خرسانه | material | يوميه | 5700 | ï»؟ |
| توريد خ . ع رتبه 20 | material | م3 | 1450 | ï»؟ |
| خشب | material | لوح | 175 | ï»؟ |
| مياه | material | م3 | 100 | ï»؟ |
| حداد | labor |  | 325 | ï»؟ |
| مساعد حداد | labor |  | 250 | ï»؟ |
| حديد | material | طن | 54000 | ï»؟ |
| توريد خرسانه مسلحه | material | م3 | 1750 | ï»؟ |
| موان | labor |  | 350 | ï»؟ |
| بناء | labor |  | 500 | ï»؟ |
| طوب اسمنتى | material | م2 | 28 | ï»؟ |
| مبيض | labor |  | 400 | ï»؟ |
| اسمنت | material | طن | 1950 | ï»؟ |
| رمل | material | م3 | 100 | ï»؟ |
| كهربائى | labor |  | 500 | ï»؟ |
| مقطوعيه كهربه | material | مقطوعيه | 1 | ï»؟ |
| سباك | labor |  | 400 | ï»؟ |
| مقطوعيه سباكه | material | مقطوعيه | 1 | ï»؟ |
| مقطوعيه جبسمبورد | material | مقطوعيه | 1 | ï»؟ |
| مقطوعيه اعمال كريتال | material | مقطوعيه | 1 | ï»؟ |
| مبلط | labor |  | 400 | ï»؟ |
| مقطوعيه سيراميك | material | مقطوعيه | 1 | ï»؟ |
| نقاش | labor |  | 400 | ï»؟ |
| مقطوعيه دهانات | material | مقطوعيه | 1 | ï»؟ |
| صنايعى الوميتال | labor |  | 450 | ï»؟ |
| مقطوعيه الوميتال | material | مقطوعيه | 1 | ï»؟ |
| مقطوعيه ابواب وشبابيك | material | مقطوعيه | 1 | ï»؟ |
| قلاب | equipment |  | 3293 | ï»؟ |
| حفار | equipment |  | 5520 | ï»؟ |

## Schedule

| ID | WBS | Activity | Duration | Start | Finish | Predecessors | Planned start | Planned finish | Total float | Free float | Constraint | Resources | Cost |
| --- | --- | --- | --- | --- | --- | --- | --- | --- | --- | --- | --- | --- | --- |
|  | 01 | **Key Dates** |  | 2021-12-01 | 2022-12-20 |  |  |  |  |  |  |  |  |
| A1000 |  | Start of The project | 1d | 2021-12-01 | 2021-12-01 |  |  |  | -14d | 0d |  |  |  |
| A1020 |  | End of Theproject | 1d | 2022-12-20 | 2022-12-20 | A2220, A2220 (other project) |  |  | -14d | 0d | start on or after 2021-12-01 |  |  |
|  | 04 | **Mobilization / Demobilization** |  | 2021-12-02 | 2021-12-23 |  |  |  |  |  |  |  |  |
| A1110 |  | Site Clean | 2d | 2021-12-02 | 2021-12-03 | A1000 |  |  | -11d | 0d | start on or after 2021-12-01 |  |  |
| A1120 |  | Site Investigation | 4d | 2021-12-06 | 2021-12-09 | A1110 |  |  | -11d | 0d | start on or after 2021-12-02 |  |  |
| A1100 |  | Mobilization | 3d | 2021-12-10 | 2021-12-14 | A1120 |  |  | -9d | 2d | start on or after 2021-12-10 |  |  |
| A1130 |  | Temporary Facilities | 5d | 2021-12-10 | 2021-12-16 | A1120 |  |  | -11d | 0d | start on or after 2021-12-02 |  |  |
| A1140 |  | Surveying Works | 5d | 2021-12-17 | 2021-12-23 | A1100, A1130 |  |  | -11d | 0d | start on or after 2021-12-02 |  |  |
|  | 05 | **Block No.1** |  | 2021-12-24 | 2022-12-14 |  |  |  |  |  |  |  |  |
|  | 10 | **Building No.1** |  | 2021-12-24 | 2022-12-14 |  |  |  |  |  |  |  |  |
|  | 01 | **Sub Structure Works** |  | 2021-12-24 | 2022-03-03 |  |  |  |  |  |  |  |  |
|  | 10 | **Soil Works** |  | 2021-12-24 | 2022-03-03 |  |  |  |  |  |  |  |  |
| A1160 |  | Excavation Works | 7d | 2021-12-24 | 2022-01-06 | A1140 | 2021-12-24 | 2022-01-03 | -11d | 0d | start on or after 2021-12-02 | قلاب [490 h]; عامل [490 h]; حفار [245 h] | 3,137,470 |
| A1180 |  | Footing Insulation | 3d | 2022-02-15 | 2022-02-22 | A1260 | 2022-02-15 | 2022-02-17 | -11d | 0d | start on or after 2021-12-02 | فنى عزل [75 h]; عامل [75 h] | 52,500 |
| A1170 |  | Backfilling Works | 4d | 2022-02-23 | 2022-03-03 | A1180 | 2022-02-23 | 2022-02-28 | -11d | 0d | start on or after 2021-12-02 | لودر [80 h]; عامل [240 h]; دكاك [80 h] | 727,680 |
|  | 20 | **Concrete works for Foundation** |  | 2022-01-07 | 2022-02-14 |  |  |  |  |  |  |  |  |
|  | 01 | **Plain Concrete Foundation** |  | 2022-01-07 | 2022-01-20 |  |  |  |  |  |  |  |  |
| A1200 |  | Erect Formworks P.C.F | 4d | 2022-01-07 | 2022-01-14 | A1160 | 2022-01-07 | 2022-01-12 | -11d | 0d | start on or after 2021-12-02 | نجار [100 h]; مساعد نجار [100 h]; عامل [100 h] | 92,500 |
| A1210 |  | Pouring P.C.F | 1d | 2022-01-17 | 2022-01-17 | A1200 |  |  | -11d | 0d | start on or after 2021-12-02 | يوميه البامب [2 يوميه]; يوميه عربيه خرسانه [4 يوميه]; توريد خ . ع رتبه 20 [478 م3]; خشب [478 لوح]; مياه [10 م3] | 824,550 |
| A1220 |  | Deshuttering Formworks P.C.F | 2d | 2022-01-18 | 2022-01-20 | A1210 | 2022-01-18 | 2022-01-19 | -11d | 0d | start on or after 2021-12-02 | نجار [34 h]; مساعد نجار [34 h]; عامل [34 h] | 31,450 |
|  | 02 | **Reinforced Concrete Foundation** |  | 2022-01-21 | 2022-02-14 |  |  |  |  |  |  |  |  |
| A1230 |  | Erect Formworks R.C.F | 6d | 2022-01-21 | 2022-02-01 | A1220 | 2022-01-21 | 2022-01-28 | -7d | 4d | start on or after 2021-12-02 | نجار [300 h]; مساعد نجار [300 h]; عامل [300 h] | 277,500 |
| A1240 |  | Blacksmithing R.C.F | 8d | 2022-01-21 | 2022-02-07 | A1220 | 2022-01-21 | 2022-02-01 | -11d | 0d | start on or after 2021-12-02 | حداد [480 h]; مساعد حداد [480 h]; عامل [480 h] | 444,000 |
| A1250 |  | Pouring R.C.F | 1d | 2022-02-08 | 2022-02-08 | A1240, A1230 |  |  | -11d | 0d | start on or after 2021-12-02 | يوميه البامب [2 يوميه]; يوميه عربيه خرسانه [6 يوميه]; حديد [95 طن]; مياه [250 م3]; خشب [1046 لوح]; توريد خرسانه مسلحه [1046 م3] | 7,226,750 |
| A1260 |  | Deshuttering Formworks R.C.F | 3d | 2022-02-09 | 2022-02-14 | A1250 | 2022-02-09 | 2022-02-11 | -11d | 0d | start on or after 2021-12-02 | نجار [105 h]; مساعد نجار [105 h]; عامل [105 h] | 97,125 |

| ID | WBS | Activity | Duration | Start | Finish | Predecessors | Planned start | Planned finish | Total float | Free float | Constraint | Resources | Cost |
| --- | --- | --- | --- | --- | --- | --- | --- | --- | --- | --- | --- | --- | --- |
|  | 02 | **Super Structure Works** |  | 2022-03-04 | 2022-12-14 |  |  |  |  |  |  |  |  |
|  | 10 | **Bd Floor Works** |  | 2022-03-04 | 2022-06-24 |  |  |  |  |  |  |  |  |
|  | 01 | **Concrete Works Bd** |  | 2022-03-04 | 2022-04-18 |  |  |  |  |  |  |  |  |
|  | 10 | **Reinforced Concrete Bd Columns** |  | 2022-03-04 | 2022-03-23 |  |  |  |  |  |  |  |  |
| A1270 |  | Erect Formworks 3 sides B_D.Col | 3d | 2022-03-04 | 2022-03-09 | A1170 | 2022-03-04 | 2022-03-08 | -8d | 3d | start on or after 2021-12-02 | نجار [60 h]; مساعد نجار [60 h]; عامل [60 h] | 55,500 |
| A1280 |  | Blacksmithing B_D.Col | 5d | 2022-03-04 | 2022-03-14 | A1170 | 2022-03-04 | 2022-03-10 | -11d | 0d | start on or after 2021-12-02 | حداد [125 h]; مساعد حداد [125 h]; عامل [125 h] | 115,625 |
| A1290 |  | Close Formworks Fourth side B_D.Col | 2d | 2022-03-15 | 2022-03-16 | A1280, A1270 |  |  | -11d | 0d | start on or after 2021-12-02 | عامل [32 h]; نجار [32 h]; مساعد نجار [32 h] | 29,600 |
| A1300 |  | Pouring B_D.Col | 1d | 2022-03-17 | 2022-03-17 | A1290 |  |  | -11d | 0d | start on or after 2021-12-02 | يوميه البامب [1 يوميه]; يوميه عربيه خرسانه [2 يوميه]; توريد خرسانه مسلحه [173 م3]; خشب [173 لوح]; مياه [10 م3]; حديد [15 طن] | 1,167,425 |
| A1310 |  | Deshuttering Formworks B_D.Col | 3d | 2022-03-18 | 2022-03-23 | A1300 | 2022-03-18 | 2022-03-22 | -11d | 0d | start on or after 2021-12-02 | مساعد نجار [60 h]; نجار [60 h]; عامل [60 h] | 55,500 |
|  | 20 | **Reinforced Concrete Bd Slab** |  | 2022-03-24 | 2022-04-18 |  |  |  |  |  |  |  |  |
| A1320 |  | Erect Formworks B_D.Slab | 8d | 2022-03-24 | 2022-04-06 | A1310 | 2022-03-24 | 2022-04-04 | -11d | 0d | start on or after 2021-12-02 | عامل [280 h]; نجار [280 h]; مساعد نجار [280 h] | 259,000 |
| A1330 |  | Blacksmithing B_D.Slab | 7d | 2022-03-24 | 2022-04-06 | A1310 | 2022-03-24 | 2022-04-01 | -11d | 0d | start on or after 2021-12-02 | حداد [490 h]; مساعد حداد [490 h]; عامل [490 h] | 453,250 |
| A1350 |  | Pouring B_D.Slab | 1d | 2022-04-07 | 2022-04-07 | A1330, A1320 |  |  | -11d | 0d | start on or after 2021-12-02 | يوميه البامب [12 يوميه]; يوميه عربيه خرسانه [36 يوميه]; حديد [100 طن]; خشب [1150 لوح]; مياه [500 م3]; توريد خرسانه مسلحه [1150 م3] | 8,012,950 |
| A1360 |  | Deshuttering Formworks B_D.Slab | 4d | 2022-04-08 | 2022-04-13 | A1350 |  |  | 7d | 0d | start on or after 2021-12-02 | مساعد نجار [200 h]; نجار [200 h]; عامل [200 h] | 185,000 |
| A1370 |  | Deckind Slab P.C for B_D | 2d | 2022-04-14 | 2022-04-18 | A1360 | 2022-04-14 | 2022-04-15 | 48d | 0d | start on or after 2021-12-02 | عامل [108 h]; لودر [36 h]; دكاك [36 h] | 327,456 |
|  | 02 | **Finishing Works Bd** |  | 2022-04-19 | 2022-06-24 |  |  |  |  |  |  |  |  |
| A1380 |  | Brick Works B_D | 8d | 2022-04-19 | 2022-04-28 | A1370 |  |  | 48d | 0d | start on or after 2021-12-02 | موان [144 h]; بناء [144 h]; عامل [144 h]; طوب اسمنتى [123570 م2] | 3,632,760 |
| A1390 |  | Conch Works | 5d | 2022-04-29 | 2022-05-05 | A1380 |  |  | 50d | 2d | start on or after 2021-12-02 | عامل [100 h]; موان [50 h]; مبيض [100 h]; اسمنت [45 طن]; رمل [14 م3]; مياه [24 م3] | 184,050 |
| A1400 |  | Erect Primary Electrical Works.B_D | 7d | 2022-04-29 | 2022-05-09 | A1380 |  |  | 48d | 0d | start on or after 2021-12-02 | كهربائى [70 h]; عامل [35 h]; مقطوعيه كهربه [6609375 مقطوعيه] | 6,656,625 |
| A1410 |  | Primary Plumbing Works B_D | 7d | 2022-04-29 | 2022-05-09 | A1380 |  |  | 48d | 0d | start on or after 2021-12-02 | عامل [126 h]; سباك [126 h]; مقطوعيه سباكه [484687 مقطوعيه] | 579,187 |
| A1420 |  | Plastering Works B_D | 1d | 2022-05-10 | 2022-05-10 | A1390, A1400, A1410 |  |  | 48d | 0d | start on or after 2021-12-02 | مبيض [8 h]; عامل [8 h]; موان [8 h]; مقطوعيه جبسمبورد [1094810 مقطوعيه] | 1,103,610 |
| A1430 |  | Install Cretal Works B_D | 3d | 2022-05-11 | 2022-05-13 | A1420 |  |  | 48d | 0d | start on or after 2021-12-02 | مقطوعيه اعمال كريتال [4944192 مقطوعيه] | 4,944,192 |
| A1440 |  | Install Ceramics Works B_D | 9d | 2022-05-16 | 2022-05-26 | A1430 |  |  | 48d | 0d | start on or after 2021-12-02 | مبلط [117 h]; موان [117 h]; عامل [117 h]; مقطوعيه سيراميك [1207102 مقطوعيه] | 1,335,802 |
| A1450 |  | Painting Works B_D | 7d | 2022-05-27 | 2022-06-06 | A1440 |  |  | 48d | 0d | start on or after 2021-12-02 | عامل [84 h]; نقاش [84 h]; مقطوعيه دهانات [514753 مقطوعيه] | 577,753 |
| A1460 |  | Alumital Fixtures B_D | 5d | 2022-06-07 | 2022-06-13 | A1450 |  |  | 48d | 0d | start on or after 2021-12-02 | صنايعى الوميتال [15 h]; عامل [30 h]; مقطوعيه الوميتال [632720 مقطوعيه] | 649,970 |
| A1470 |  | Finishing Plumbing Fixtures B_D | 4d | 2022-06-14 | 2022-06-17 | A1460 |  |  | 49d | 1d | start on or after 2021-12-02 | عامل [40 h]; سباك [40 h]; مقطوعيه سباكه [484687 مقطوعيه] | 514,687 |
| A1480 |  | Finishing Electrical Fixtures B_D | 4d | 2022-06-14 | 2022-06-17 | A1460 |  |  | 49d | 1d | start on or after 2021-12-02 | كهربائى [40 h]; عامل [20 h]; مقطوعيه كهربه [6609375 مقطوعيه] | 6,636,375 |
| A1490 |  | Finishing doors and windows Fixtures B_D | 5d | 2022-06-14 | 2022-06-20 | A1460 |  |  | 48d | 0d | start on or after 2021-12-02 | نجار [35 h]; مساعد نجار [35 h]; مقطوعيه ابواب وشبابيك [583594 مقطوعيه] | 603,719 |
| A1500 |  | Cleaning and Closing B_D | 4d | 2022-06-21 | 2022-06-24 | A1470, A1480, A1490 |  |  | 48d | 2d | start on or after 2021-12-02 | عامل [64 h] | 22,400 |

| ID | WBS | Activity | Duration | Start | Finish | Predecessors | Total float | Free float | Constraint | Resources | Cost |
| --- | --- | --- | --- | --- | --- | --- | --- | --- | --- | --- | --- |
|  | 20 | **Ground Floor Works** |  | 2022-04-08 | 2022-08-31 |  |  |  |  |  |  |
|  | 01 | **Concrete Works G.F** |  | 2022-04-08 | 2022-06-28 |  |  |  |  |  |  |
|  | 10 | **Reinforced Concrete G.F Columns** |  | 2022-04-08 | 2022-05-09 |  |  |  |  |  |  |
| A1510 |  | Erect Formworks 3 sides G.F.Col | 8d | 2022-04-08 | 2022-04-19 | A1350 | -10d | 1d | start on or after 2021-12-02 | نجار [80 h]; مساعد نجار [80 h]; عامل [80 h] | 74,000 |
| A1520 |  | Blacksmithing G.F.Col | 9d | 2022-04-08 | 2022-04-20 | A1350 | -11d | 0d | start on or after 2021-12-02 | عامل [117 h]; حداد [117 h]; مساعد حداد [117 h] | 108,225 |
| A1530 |  | Close Formworks Fourth side G.F.Col | 5d | 2022-04-21 | 2022-04-27 | A1520, A1510 | -11d | 0d | start on or after 2021-12-02 | نجار [25 h]; مساعد نجار [25 h]; عامل [25 h] | 23,125 |
| A1540 |  | Pouring G.F.Col | 1d | 2022-04-28 | 2022-04-28 | A1530 | -11d | 0d | start on or after 2021-12-02 | يوميه البامب [1 يوميه]; يوميه عربيه خرسانه [2 يوميه]; توريد خرسانه مسلحه [233 م3]; حديد [25 طن]; خشب [233 لوح]; مياه [15 م3] | 1,823,425 |
| A1550 |  | Deshuttering Formworks G.F.Col | 7d | 2022-04-29 | 2022-05-09 | A1540 | -11d | 0d | start on or after 2021-12-02 | نجار [105 h]; مساعد نجار [105 h]; عامل [105 h] | 97,125 |
|  | 20 | **Reinforced Concrete G.F Slab** |  | 2022-05-10 | 2022-06-28 |  |  |  |  |  |  |
| A1560 |  | Erect Formworks G.F.Slab | 14d | 2022-05-10 | 2022-05-27 | A1550, A1360 | -11d | 0d | start on or after 2021-12-02 | عامل [341 h]; نجار [341 h]; مساعد نجار [341 h] | 315,425 |
| A1570 |  | Blacksmithing G.F.Slab | 15d | 2022-05-30 | 2022-06-17 | A1560 | -11d | 0d | start on or after 2021-12-02 | حداد [564 h]; مساعد حداد [564 h]; عامل [564 h] | 521,700 |
| A1590 |  | Pouring G.F.Slab | 1d | 2022-06-20 | 2022-06-20 | A1570 | -11d | 0d | start on or after 2021-12-02 | يوميه البامب [12 يوميه]; يوميه عربيه خرسانه [45 يوميه]; مياه [800 م3]; خشب [675 لوح]; توريد خرسانه مسلحه [675 م3]; حديد [64 طن] | 5,235,875 |
| A1600 |  | Deshuttering Formworks G.F.Slab | 6d | 2022-06-21 | 2022-06-28 | A1590 | 4d | 0d | start on or after 2021-12-02 | نجار [90 h]; مساعد نجار [90 h]; عامل [90 h] | 83,250 |
|  | 02 | **Finishing Works G.F** |  | 2022-06-29 | 2022-08-31 |  |  |  |  |  |  |
| A1620 |  | Brick Works G.F | 8d | 2022-06-29 | 2022-07-08 | A1600, A1500, A1380 | 46d | 0d | start on or after 2021-12-02 | عامل [144 h]; بناء [144 h]; موان [144 h]; طوب اسمنتى [123570 م2] | 3,632,760 |
| A1630 |  | Conch Works | 5d | 2022-07-11 | 2022-07-15 | A1620, A1390 | 48d | 2d | start on or after 2021-12-02 | موان [50 h]; مبيض [100 h]; عامل [100 h]; اسمنت [45 طن]; رمل [14 م3]; مياه [24 م3] | 184,050 |
| A1640 |  | Erect Primary Electrical Works.G.F | 7d | 2022-07-11 | 2022-07-19 | A1400, A1400 FF, A1620 | 46d | 0d | start on or after 2021-12-02 | عامل [35 h]; كهربائى [70 h]; مقطوعيه كهربه [6609375 مقطوعيه] | 6,656,625 |
| A1650 |  | Primary Plumbing Works G.F | 8d | 2022-07-11 | 2022-07-20 | A1620, A1410 | 46d | 30d | start on or after 2021-12-02 | سباك [144 h]; عامل [144 h]; مقطوعيه سباكه [484687 مقطوعيه] | 592,687 |
| A1660 |  | Plastering Works G.F | 1d | 2022-07-20 | 2022-07-20 | A1630, A1640, A1420 | 46d | 0d | start on or after 2021-12-02 | عامل [8 h]; مبيض [8 h]; موان [8 h]; مقطوعيه جبسمبورد [1094810 مقطوعيه] | 1,103,610 |
| A1670 |  | Install Cretal Works G.F | 1d | 2022-07-21 | 2022-07-21 | A1660, A1430 | 46d | 0d | start on or after 2021-12-02 | مقطوعيه اعمال كريتال [4944192 مقطوعيه] | 4,944,192 |
| A1680 |  | Install Ceramics Works G.F | 9d | 2022-07-22 | 2022-08-03 | A1670, A1440 | 46d | 0d | start on or after 2021-12-02 | مبلط [117 h]; موان [117 h]; عامل [117 h]; مقطوعيه سيراميك [1207102 مقطوعيه] | 1,335,802 |
| A1690 |  | Painting Works G.F | 7d | 2022-08-04 | 2022-08-12 | A1680, A1450 | 50d | 0d | start on or after 2021-12-02 | عامل [84 h]; نقاش [84 h]; مقطوعيه دهانات [514753 مقطوعيه] | 577,753 |
| A1700 |  | Alumital Fixtures G.F | 5d | 2022-08-15 | 2022-08-19 | A1690, A1460 | 54d | 0d | start on or after 2021-12-02 | عامل [30 h]; صنايعى الوميتال [15 h]; مقطوعيه الوميتال [632720 مقطوعيه] | 649,970 |
| A1710 |  | Finishing Plumbing Fixtures G.F | 4d | 2022-08-22 | 2022-08-25 | A1700, A1470 | 57d | 1d | start on or after 2021-12-02 | سباك [40 h]; عامل [40 h]; مقطوعيه سباكه [484687 مقطوعيه] | 514,687 |
| A1720 |  | Finishing Electrical Fixtures G.F | 4d | 2022-08-22 | 2022-08-25 | A1700, A1480 | 57d | 1d | start on or after 2021-12-02 | عامل [20 h]; كهربائى [40 h]; مقطوعيه كهربه [6609375 مقطوعيه] | 6,636,375 |
| A1730 |  | Finishing doors and windows Fixtures G.F | 5d | 2022-08-22 | 2022-08-26 | A1700, A1490 | 54d | 0d | start on or after 2021-12-02 | مساعد نجار [35 h]; نجار [35 h]; مقطوعيه ابواب وشبابيك [583594 مقطوعيه] | 603,719 |
| A1740 |  | Cleaning and Closing G.F | 3d | 2022-08-29 | 2022-08-31 | A1710, A1720, A1730, A1500 | 58d | 36d | start on or after 2021-12-02 | عامل [48 h] | 16,800 |

| ID | WBS | Activity | Duration | Start | Finish | Predecessors | Total float | Free float | Constraint | Resources | Cost |
| --- | --- | --- | --- | --- | --- | --- | --- | --- | --- | --- | --- |
|  | 30 | **First Floor Works** |  | 2022-06-21 | 2022-10-25 |  |  |  |  |  |  |
|  | 01 | **Concrete Works 1_st.F** |  | 2022-06-21 | 2022-08-19 |  |  |  |  |  |  |
|  | 10 | **Reinforced Concrete 1_st.F Columns** |  | 2022-06-21 | 2022-07-18 |  |  |  |  |  |  |
| A1750 |  | Erect Formworks 3 sides 1_st F.Col | 9d | 2022-06-21 | 2022-07-01 | A1590 | -9d | 2d | start on or after 2021-12-02 | عامل [117 h]; نجار [117 h]; مساعد نجار [117 h] | 108,225 |
| A1760 |  | Blacksmithing 1_st F.Col | 11d | 2022-06-21 | 2022-07-05 | A1590 | -11d | 0d | start on or after 2021-12-02 | حداد [209 h]; مساعد حداد [209 h]; عامل [209 h] | 193,325 |
| A1770 |  | Close Formworks Fourth side 1_st F.Col | 4d | 2022-07-06 | 2022-07-11 | A1760, A1750 | -11d | 0d | start on or after 2021-12-02 | عامل [28 h]; مساعد نجار [28 h]; نجار [28 h] | 25,900 |
| A1780 |  | Pouring 1_st F.Col | 1d | 2022-07-12 | 2022-07-12 | A1770 | -11d | 0d | start on or after 2021-12-02 | يوميه البامب [1 يوميه]; يوميه عربيه خرسانه [2 يوميه]; حديد [35 طن]; توريد خرسانه مسلحه [416 م3]; مياه [25 م3]; خشب [416 لوح] | 2,716,700 |
| A1790 |  | Deshuttering Formworks 1_st F.Col | 4d | 2022-07-13 | 2022-07-18 | A1780 | -11d | 0d | start on or after 2021-12-02 | نجار [36 h]; مساعد نجار [36 h]; عامل [36 h] | 33,300 |
|  | 20 | **Reinforced Concrete 1_st.F Slab** |  | 2022-07-19 | 2022-08-19 |  |  |  |  |  |  |
| A1800 |  | Erect Formworks 1_st F.Slab | 16d | 2022-07-19 | 2022-08-09 | A1790, A1600 | -10d | 1d | start on or after 2021-12-02 | عامل [341 h]; نجار [341 h]; مساعد نجار [341 h] | 315,425 |
| A1810 |  | Blacksmithing 1_st F.Slab | 17d | 2022-07-19 | 2022-08-10 | A1790 | -11d | 0d | start on or after 2021-12-02 | حداد [564 h]; مساعد حداد [564 h]; عامل [564 h] | 521,700 |
| A1830 |  | Pouring 1_st F.Slab | 1d | 2022-08-11 | 2022-08-11 | A1810, A1800 | -11d | 0d | start on or after 2021-12-02 | يوميه البامب [24 يوميه]; يوميه عربيه خرسانه [72 يوميه]; خشب [675 لوح]; توريد خرسانه مسلحه [675 م3]; حديد [65 طن]; مياه [800 م3] | 5,587,775 |
| A1840 |  | Deshuttering Formworks 1_st F.Slab | 6d | 2022-08-12 | 2022-08-19 | A1830 | 5d | 0d | start on or after 2021-12-02 | نجار [90 h]; مساعد نجار [90 h]; عامل [90 h] | 83,250 |
|  | 02 | **Finishing Works 1_st.F** |  | 2022-08-22 | 2022-10-25 |  |  |  |  |  |  |
| A1860 |  | Brick Works 1_st F | 8d | 2022-08-22 | 2022-08-31 | A1840, A1620 | 16d | 0d | start on or after 2021-12-02 | عامل [144 h]; بناء [144 h]; موان [144 h]; طوب اسمنتى [133570 م2] | 3,912,760 |
| A1870 |  | Conch Works | 5d | 2022-09-01 | 2022-09-07 | A1860, A1630 | 19d | 3d | start on or after 2021-12-02 | مبيض [100 h]; موان [50 h]; عامل [100 h]; رمل [14 م3]; اسمنت [45 طن]; مياه [24 م3] | 184,050 |
| A1880 |  | Erect Primary Electrical Works.1_st F | 7d | 2022-09-01 | 2022-09-09 | A1860, A1640 | 17d | 1d | start on or after 2021-12-02 | عامل [35 h]; كهربائى [70 h]; مقطوعيه كهربه [6609375 مقطوعيه] | 6,656,625 |
| A1890 |  | Primary Plumbing Works 1_st F | 8d | 2022-09-01 | 2022-09-12 | A1860, A1650 | 16d | 0d | start on or after 2021-12-02 | سباك [144 h]; عامل [144 h]; مقطوعيه سباكه [484687 مقطوعيه] | 592,687 |
| A1900 |  | Plastering Works 1_st F | 1d | 2022-09-13 | 2022-09-13 | A1870, A1880, A1890, A1660 | 16d | 0d | start on or after 2021-12-02 | عامل [8 h]; مبيض [8 h]; موان [8 h]; مقطوعيه جبسمبورد [1094810 مقطوعيه] | 1,103,610 |
| A1910 |  | Install Cretal Works 1_st F | 1d | 2022-09-14 | 2022-09-14 | A1900, A1670 | 16d | 0d | start on or after 2021-12-02 | مقطوعيه اعمال كريتال [4944192 مقطوعيه] | 4,944,192 |
| A1920 |  | Install Ceramics Works 1_st F | 9d | 2022-09-15 | 2022-09-27 | A1910, A1680 | 16d | 0d | start on or after 2021-12-02 | مبلط [117 h]; موان [117 h]; عامل [117 h]; مقطوعيه سيراميك [1207102 مقطوعيه] | 1,335,802 |
| A1930 |  | Painting Works 1_st F | 7d | 2022-09-28 | 2022-10-06 | A1920, A1690 | 18d | 0d | start on or after 2021-12-02 | عامل [84 h]; نقاش [84 h]; مقطوعيه دهانات [514752 مقطوعيه] | 577,752 |
| A1940 |  | Alumital Fixtures 1_st F | 5d | 2022-10-07 | 2022-10-13 | A1930, A1700 | 20d | 0d | start on or after 2021-12-02 | صنايعى الوميتال [15 h]; عامل [30 h]; مقطوعيه الوميتال [632720 مقطوعيه] | 649,970 |
| A1950 |  | Finishing Plumbing Fixtures 1_st F | 4d | 2022-10-14 | 2022-10-19 | A1940, A1710 | 22d | 1d | start on or after 2021-12-02 | عامل [40 h]; سباك [40 h]; مقطوعيه سباكه [484687 مقطوعيه] | 514,687 |
| A1960 |  | Finishing Electrical Fixtures 1_st F | 4d | 2022-10-14 | 2022-10-19 | A1940, A1720 | 22d | 1d | start on or after 2021-12-02 | كهربائى [40 h]; عامل [20 h]; مقطوعيه كهربه [6609375 مقطوعيه] | 6,636,375 |
| A1970 |  | Finishing doors and windows Fixtures 1_st F | 5d | 2022-10-14 | 2022-10-20 | A1940, A1730 | 20d | 0d | start on or after 2021-12-02 | نجار [35 h]; مساعد نجار [35 h]; مقطوعيه ابواب وشبابيك [583594 مقطوعيه] | 603,719 |
| A1980 |  | Cleaning and Closing 1_st F | 3d | 2022-10-21 | 2022-10-25 | A1950, A1960, A1970, A1740 | 22d | 33d | start on or after 2021-12-02 | عامل [48 h] | 16,800 |

| ID | WBS | Activity | Duration | Start | Finish | Predecessors | Total float | Free float | Constraint | Resources | Cost |
| --- | --- | --- | --- | --- | --- | --- | --- | --- | --- | --- | --- |
|  | 40 | **Second Floor Works** |  | 2022-08-12 | 2022-12-14 |  |  |  |  |  |  |
|  | 01 | **Concrete Works 2_nd.F** |  | 2022-08-12 | 2022-10-10 |  |  |  |  |  |  |
|  | 10 | **Reinforced Concrete 2_nd.F Columns** |  | 2022-08-12 | 2022-09-08 |  |  |  |  |  |  |
| A1990 |  | Erect Formworks 3 sides 2_nd F.Col | 9d | 2022-08-12 | 2022-08-24 | A1830 | -9d | 2d | start on or after 2021-12-02 | عامل [117 h]; نجار [117 h]; مساعد نجار [117 h] | 108,225 |
| A2000 |  | Blacksmithing 2_nd F.Col | 11d | 2022-08-12 | 2022-08-26 | A1830 | -11d | 0d | start on or after 2021-12-02 | حداد [209 h]; مساعد حداد [209 h]; عامل [209 h] | 193,325 |
| A2010 |  | Close Formworks Fourth side 2_nd F.Col | 4d | 2022-08-29 | 2022-09-01 | A2000, A1990 | -11d | 0d | start on or after 2021-12-02 | عامل [28 h]; نجار [28 h]; مساعد نجار [28 h] | 25,900 |
| A2020 |  | Pouring 2_nd F.Col | 1d | 2022-09-02 | 2022-09-02 | A2010 | -11d | 0d | start on or after 2021-12-02 | يوميه البامب [2 يوميه]; يوميه عربيه خرسانه [4 يوميه]; مياه [25 م3]; حديد [41 طن]; خشب [416 لوح]; توريد خرسانه مسلحه [416 م3] | 3,064,100 |
| A2030 |  | Deshuttering Formworks 2_nd F.Col | 4d | 2022-09-05 | 2022-09-08 | A2020 | -11d | 0d | start on or after 2021-12-02 | نجار [36 h]; مساعد نجار [36 h]; عامل [36 h] | 33,300 |
|  | 20 | **Reinforced Concrete 2_nd.F Slab** |  | 2022-09-09 | 2022-10-10 |  |  |  |  |  |  |
| A2040 |  | Erect Formworks 2_nd F.Slab | 13d | 2022-09-09 | 2022-09-27 | A2030, A1840 | -9d | 2d | start on or after 2021-12-02 | عامل [341 h]; نجار [341 h]; مساعد نجار [341 h] | 315,425 |
| A2050 |  | Blacksmithing 2_nd F.Slab | 15d | 2022-09-09 | 2022-09-29 | A2030 | -11d | 0d | start on or after 2021-12-02 | حداد [564 h]; مساعد حداد [564 h]; عامل [564 h] | 521,700 |
| A2070 |  | Pouring 2_nd F.Slab | 1d | 2022-09-30 | 2022-09-30 | A2050, A2040 | -11d | 0d | start on or after 2021-12-02 | يوميه البامب [24 يوميه]; يوميه عربيه خرسانه [72 يوميه]; توريد خرسانه مسلحه [675 م3]; خشب [675 لوح]; حديد [68 طن]; مياه [800 م3] | 5,749,775 |
| A2080 |  | Deshuttering Formworks 2_nd F.Slab | 6d | 2022-10-03 | 2022-10-10 | A2070 | -11d | 0d | start on or after 2021-12-02 | نجار [90 h]; مساعد نجار [90 h]; عامل [90 h] | 83,250 |
|  | 02 | **Finishing Works 2_nd.F** |  | 2022-10-11 | 2022-12-14 |  |  |  |  |  |  |
| A2100 |  | Brick Works 2_nd F | 8d | 2022-10-11 | 2022-10-20 | A2080, A1860 | -11d | 0d | start on or after 2021-12-02 | عامل [144 h]; بناء [144 h]; موان [144 h]; طوب اسمنتى [133570 م2] | 3,912,760 |
| A2110 |  | Conch Works | 5d | 2022-10-21 | 2022-10-27 | A2100, A1870 | -8d | 3d | start on or after 2021-12-02 | موان [50 h]; مبيض [100 h]; عامل [100 h]; رمل [14 م3]; اسمنت [45 طن]; مياه [24 م3] | 184,050 |
| A2120 |  | Erect Primary Electrical Works.2_nd F | 7d | 2022-10-21 | 2022-10-31 | A2100, A1880 | -10d | 1d | start on or after 2021-12-02 | عامل [35 h]; كهربائى [70 h]; مقطوعيه كهربه [6609375 مقطوعيه] | 6,656,625 |
| A2130 |  | Primary Plumbing Works 2_nd F | 8d | 2022-10-21 | 2022-11-01 | A2100, A1890 | -11d | 0d | start on or after 2021-12-02 | سباك [144 h]; عامل [144 h]; مقطوعيه سباكه [484687 مقطوعيه] | 592,687 |
| A2140 |  | Plastering Works 2_nd F | 1d | 2022-11-02 | 2022-11-02 | A2110, A2120, A2130, A1900 | -11d | 0d | start on or after 2021-12-02 | عامل [8 h]; مبيض [8 h]; موان [8 h]; مقطوعيه جبسمبورد [1094810 مقطوعيه] | 1,103,610 |
| A2150 |  | Install Cretal Works 2_nd F | 1d | 2022-11-03 | 2022-11-03 | A2140, A1910 | -11d | 0d | start on or after 2021-12-02 | مقطوعيه اعمال كريتال [4944192 مقطوعيه] | 4,944,192 |
| A2160 |  | Install Ceramics Works 2_nd F | 9d | 2022-11-04 | 2022-11-16 | A2150, A1920 | -11d | 0d | start on or after 2021-12-02 | مبلط [117 h]; موان [117 h]; عامل [117 h]; مقطوعيه سيراميك [1207102 مقطوعيه] | 1,335,802 |
| A2170 |  | Painting Works 2_nd F | 7d | 2022-11-17 | 2022-11-25 | A2160, A1930 | -11d | 0d | start on or after 2021-12-02 | عامل [84 h]; نقاش [84 h]; مقطوعيه دهانات [514752 مقطوعيه] | 577,752 |
| A2180 |  | Alumital Fixtures 2_nd F | 5d | 2022-11-28 | 2022-12-02 | A2170, A1940 | -11d | 0d | start on or after 2021-12-02 | صنايعى الوميتال [15 h]; عامل [30 h]; مقطوعيه الوميتال [632720 مقطوعيه] | 649,970 |
| A2190 |  | Finishing Plumbing Fixtures 2_nd F | 4d | 2022-12-05 | 2022-12-08 | A2180, A1950 | -10d | 1d | start on or after 2021-12-02 | عامل [40 h]; سباك [40 h]; مقطوعيه سباكه [484687 مقطوعيه] | 514,687 |
| A2200 |  | Finishing Electrical Fixtures 2_nd F | 4d | 2022-12-05 | 2022-12-08 | A2180, A1960 | -10d | 1d | start on or after 2021-12-02 | عامل [20 h]; كهربائى [40 h]; مقطوعيه كهربه [6609375 مقطوعيه] | 6,636,375 |
| A2210 |  | Finishing doors and windows Fixtures 2_nd F | 5d | 2022-12-05 | 2022-12-09 | A2180, A1970 | -11d | 0d | start on or after 2021-12-02 | نجار [35 h]; مساعد نجار [35 h]; مقطوعيه ابواب وشبابيك [583594 مقطوعيه] | 603,719 |
| A2220 |  | Cleaning and Closing 2_nd F | 3d | 2022-12-12 | 2022-12-14 | A2190, A2200, A2210, A1980 | -11d | 3d | start on or after 2021-12-02 | عامل [48 h] | 16,800 |

# fuclty of engineering

Schedule from Primavera P6, 2021-12-02 to 2022-12-19, data date 2021-12-01, costs in USD.
Must finish by 2022-12-01

## Calendars

- Corporate - Standard Full Time: Mon-Fri 08:00-16:00; Sat-Sun off.

## Resources

| Resource | Group | Unit | Rate | Notes |
| --- | --- | --- | --- | --- |
| حفار | equipment |  | 5520 | ï»؟ |
| قلاب | equipment |  | 3293 | ï»؟ |
| عامل | labor |  | 350 | ï»؟ |
| لودر | equipment |  | 4796 | ï»؟ |
| دكاك | equipment |  | 3250 | ï»؟ |
| فنى عزل | labor |  | 350 | ï»؟ |
| بناء | labor |  | 500 | ï»؟ |
| موان | labor |  | 350 | ï»؟ |
| مساعد نجار | labor |  | 250 | ï»؟ |
| نجار | labor |  | 325 | ï»؟ |
| يوميه البامب | material | يوميه | 12000 | ï»؟ |
| يوميه عربيه خرسانه | material | يوميه | 5700 | ï»؟ |
| مياه | material | م3 | 100 | ï»؟ |
| توريد خ . ع رتبه 20 | material | م3 | 1450 | ï»؟ |
| خشب | material | لوح | 175 | ï»؟ |
| حداد | labor |  | 325 | ï»؟ |
| مساعد حداد | labor |  | 250 | ï»؟ |
| توريد خرسانه مسلحه | material | م3 | 1750 | ï»؟ |
| حديد | material | طن | 54000 | ï»؟ |
| طوب اسمنتى | material | م2 | 28 | ï»؟ |
| مبيض | labor |  | 400 | ï»؟ |
| رمل | material | م3 | 100 | ï»؟ |
| اسمنت | material | طن | 1950 | ï»؟ |
| كهربائى | labor |  | 500 | ï»؟ |
| مقطوعيه كهربه | material | مقطوعيه | 1 | ï»؟ |
| سباك | labor |  | 400 | ï»؟ |
| مقطوعيه سباكه | material | مقطوعيه | 1 | ï»؟ |
| مقطوعيه جبسمبورد | material | مقطوعيه | 1 | ï»؟ |
| مقطوعيه اعمال كريتال | material | مقطوعيه | 1 | ï»؟ |
| مبلط | labor |  | 400 | ï»؟ |
| مقطوعيه سيراميك | material | مقطوعيه | 1 | ï»؟ |
| نقاش | labor |  | 400 | ï»؟ |
| مقطوعيه دهانات | material | مقطوعيه | 1 | ï»؟ |
| صنايعى الوميتال | labor |  | 450 | ï»؟ |
| مقطوعيه الوميتال | material | مقطوعيه | 1 | ï»؟ |
| مقطوعيه ابواب وشبابيك | material | مقطوعيه | 1 | ï»؟ |

## Schedule

| ID | WBS | Activity | Duration | Start | Finish | Predecessors | Total float | Free float | Constraint | Resources | Cost |
| --- | --- | --- | --- | --- | --- | --- | --- | --- | --- | --- | --- |
|  | 01 | **Mobilization / Demobilization** |  | 2021-12-02 | 2021-12-20 |  |  |  |  |  |  |
| A1110 |  | Site Clean | 4d | 2021-12-02 | 2021-12-07 | A1000 (other project) | -14d | 0d | start on 2021-12-02 |  |  |
| A1120 |  | Site Investigation | 3d | 2021-12-08 | 2021-12-10 | A1110 | -14d | 0d | start on or after 2021-12-02 |  |  |
| A1100 |  | Mobilization | 3d | 2021-12-13 | 2021-12-15 | A1120 | -14d | 0d | start on or after 2021-12-02 |  |  |
| A1130 |  | Temporary Facilities | 3d | 2021-12-13 | 2021-12-15 | A1120 | -14d | 0d | start on or after 2021-12-02 |  |  |
| A1140 |  | Surveying Works | 3d | 2021-12-16 | 2021-12-20 | A1130, A1100 | -14d | 0d | start on or after 2021-12-02 |  |  |
|  | 02 | **Block No.1** |  | 2021-12-21 | 2022-12-19 |  |  |  |  |  |  |
|  | 10 | **Building No.1** |  | 2021-12-21 | 2022-12-19 |  |  |  |  |  |  |
|  | 01 | **Sub Structure Works** |  | 2021-12-21 | 2022-03-16 |  |  |  |  |  |  |
|  | 10 | **Soil Works** |  | 2021-12-21 | 2022-03-16 |  |  |  |  |  |  |
| A1160 |  | Excavation Works | 12d | 2021-12-21 | 2022-01-05 | A1140 | -14d | 0d | start on or after 2021-12-02 | حفار [204 h]; قلاب [408 h]; عامل [408 h] | 2,612,424 |
| A1180 |  | Footing Insulation | 8d | 2022-02-15 | 2022-02-24 | A1260 | -14d | 0d | start on or after 2021-12-02 | فنى عزل [40 h]; عامل [40 h] | 28,000 |
| A1190 |  | Essia Mason | 5d | 2022-02-25 | 2022-03-03 | A1180 | -14d | 0d | start on or after 2021-12-02 | بناء [40 h]; موان [40 h]; عامل [40 h] | 48,000 |
| A1170 |  | Backfilling Works | 9d | 2022-03-04 | 2022-03-16 | A1190 | -14d | 0d | start on or after 2021-12-02 | لودر [54 h]; عامل [162 h]; دكاك [54 h] | 491,184 |
|  | 20 | **Concrete works for Foundation** |  | 2022-01-06 | 2022-02-14 |  |  |  |  |  |  |
|  | 01 | **Plain Concrete Foundation** |  | 2022-01-06 | 2022-01-18 |  |  |  |  |  |  |
| A1200 |  | Erect Formworks P.C.F | 5d | 2022-01-06 | 2022-01-12 | A1160 | -14d | 0d | start on or after 2021-12-02 | عامل [40 h]; مساعد نجار [40 h]; نجار [40 h] | 37,000 |
| A1210 |  | Pouring P.C.F | 1d | 2022-01-13 | 2022-01-13 | A1200 | -14d | 0d | start on or after 2021-12-02 | يوميه البامب [2 يوميه]; يوميه عربيه خرسانه [4 يوميه]; مياه [10 م3]; توريد خ . ع رتبه 20 [384 م3]; خشب [384 لوح] | 671,800 |
| A1220 |  | Deshuttering Formworks P.C.F | 3d | 2022-01-14 | 2022-01-18 | A1210 | -14d | 0d | start on or after 2021-12-02 | مساعد نجار [21 h]; نجار [21 h]; عامل [21 h] | 19,425 |
|  | 02 | **Reinforced Concrete Foundation** |  | 2022-01-19 | 2022-02-14 |  |  |  |  |  |  |
| A1230 |  | Erect Formworks R.C.F | 10d | 2022-01-19 | 2022-02-01 | A1220 | -10d | 4d | start on or after 2021-12-02 | عامل [300 h]; نجار [300 h]; مساعد نجار [300 h] | 277,500 |
| A1240 |  | Blacksmithing R.C.F | 14d | 2022-01-19 | 2022-02-07 | A1220 | -14d | 0d | start on or after 2021-12-02 | حداد [280 h]; مساعد حداد [280 h]; عامل [280 h] | 259,000 |
| A1250 |  | Pouring R.C.F | 1d | 2022-02-08 | 2022-02-08 | A1240, A1230 | -14d | 0d | start on or after 2021-12-02 | يوميه البامب [2 يوميه]; يوميه عربيه خرسانه [6 يوميه]; خشب [838 لوح]; توريد خرسانه مسلحه [838 م3]; مياه [45 م3]; حديد [955 طن] | 53,245,850 |
| A1260 |  | Deshuttering Formworks R.C.F | 4d | 2022-02-09 | 2022-02-14 | A1250 | -14d | 0d | start on or after 2021-12-02 | نجار [60 h]; مساعد نجار [60 h]; عامل [60 h] | 55,500 |

| ID | WBS | Activity | Duration | Start | Finish | Predecessors | Total float | Free float | Constraint | Resources | Cost |
| --- | --- | --- | --- | --- | --- | --- | --- | --- | --- | --- | --- |
|  | 02 | **Super Structure Works** |  | 2022-03-17 | 2022-12-19 |  |  |  |  |  |  |
|  | 10 | **Bd Floor Works** |  | 2022-03-17 | 2022-07-29 |  |  |  |  |  |  |
|  | 01 | **Concrete Works Bd** |  | 2022-03-17 | 2022-05-23 |  |  |  |  |  |  |
|  | 10 | **Reinforced Concrete Bd Columns** |  | 2022-03-17 | 2022-04-01 |  |  |  |  |  |  |
| A1270 |  | Erect Formworks 3 sides B_D.Col | 4d | 2022-03-17 | 2022-03-22 | A1170 | -12d | 2d | start on or after 2021-12-02 | عامل [40 h]; نجار [40 h]; مساعد نجار [40 h] | 37,000 |
| A1280 |  | Blacksmithing B_D.Col | 6d | 2022-03-17 | 2022-03-24 | A1170 | -14d | 0d | start on or after 2021-12-02 | حداد [60 h]; مساعد حداد [60 h]; عامل [60 h] | 55,500 |
| A1290 |  | Close Formworks Fourth side B_D.Col | 2d | 2022-03-25 | 2022-03-28 | A1280, A1270 | -14d | 0d | start on or after 2021-12-02 | عامل [12 h]; نجار [12 h]; مساعد نجار [12 h] | 11,100 |
| A1300 |  | Pouring B_D.Col | 1d | 2022-03-29 | 2022-03-29 | A1290 | -14d | 0d | start on or after 2021-12-02 | يوميه البامب [1 يوميه]; يوميه عربيه خرسانه [2 يوميه]; حديد [15 طن]; خشب [139 لوح]; توريد خرسانه مسلحه [139 م3]; مياه [10 م3] | 1,101,975 |
| A1310 |  | Deshuttering Formworks B_D.Col | 3d | 2022-03-30 | 2022-04-01 | A1300 | -14d | 0d | start on or after 2021-12-02 | نجار [24 h]; مساعد نجار [24 h]; عامل [24 h] | 22,200 |
|  | 20 | **Reinforced Concrete Bd Slab** |  | 2022-04-04 | 2022-05-23 |  |  |  |  |  |  |
| A1320 |  | Erect Formworks B_D.Slab | 18d | 2022-04-04 | 2022-04-27 | A1310 | -6d | 8d | start on or after 2021-12-02 | عامل [480 h]; نجار [480 h]; مساعد نجار [480 h] | 444,000 |
| A1340 |  | Blacksmithing B_D.Slab | 26d | 2022-04-04 | 2022-05-09 | A1310 | -14d | 0d | start on or after 2021-12-02 | حداد [1920 h]; مساعد حداد [1920 h]; عامل [1920 h] | 1,776,000 |
| A1350 |  | Pouring B_D.Slab | 1d | 2022-05-10 | 2022-05-10 | A1340, A1320 | -14d | 0d | start on or after 2021-12-02 | يوميه البامب [12 يوميه]; يوميه عربيه خرسانه [36 يوميه]; خشب [925 لوح]; توريد خرسانه مسلحه [925 م3]; مياه [450 م3]; حديد [92 طن] | 7,142,825 |
| A1360 |  | Deshuttering Formworks B_D.Slab | 6d | 2022-05-11 | 2022-05-18 | A1350 | 2d | 0d | start on or after 2021-12-02 | عامل [102 h]; مساعد نجار [102 h]; نجار [102 h] | 94,350 |
| A1370 |  | Deckind Slab P.C for B_D | 3d | 2022-05-19 | 2022-05-23 | A1360 | 51d | 0d | start on or after 2021-12-02 | لودر [9 h]; دكاك [9 h]; عامل [27 h] | 81,864 |
|  | 02 | **Finishing Works Bd** |  | 2022-05-24 | 2022-07-29 |  |  |  |  |  |  |
| A1380 |  | Brick Works B_D | 7d | 2022-05-24 | 2022-06-01 | A1370 | 51d | 0d | start on or after 2021-12-02 | بناء [98 h]; موان [98 h]; عامل [98 h]; طوب اسمنتى [99467 م2] | 2,902,676 |
| A1390 |  | Conch work | 4d | 2022-06-02 | 2022-06-07 | A1380 | 54d | 3d | start on or after 2021-12-02 | عامل [64 h]; موان [32 h]; مبيض [64 h]; رمل [10 م3]; اسمنت [33 طن]; مياه [16 م3] | 126,150 |
| A1400 |  | Erect Primary Electrical Works.B_D | 6d | 2022-06-02 | 2022-06-09 | A1380 | 52d | 1d | start on or after 2021-12-02 | كهربائى [48 h]; عامل [24 h]; مقطوعيه كهربه [4921875 مقطوعيه] | 4,954,275 |
| A1410 |  | Primary Plumbing Works B_D | 7d | 2022-06-02 | 2022-06-10 | A1380 | 51d | 0d | start on or after 2021-12-02 | عامل [98 h]; سباك [98 h]; مقطوعيه سباكه [360937 مقطوعيه] | 434,437 |
| A1420 |  | Plastering Works B_D | 1d | 2022-06-13 | 2022-06-13 | A1390, A1400, A1410 | 51d | 0d | start on or after 2021-12-02 | مبيض [8 h]; موان [8 h]; عامل [8 h]; مقطوعيه جبسمبورد [815285 مقطوعيه] | 824,085 |
| A1430 |  | Install Cretal Works B_D | 5d | 2022-06-14 | 2022-06-20 | A1420 | 51d | 0d | start on or after 2021-12-02 | مقطوعيه اعمال كريتال [3681845 مقطوعيه] | 3,681,845.12 |
| A1440 |  | Install Ceramics Works B_D | 12d | 2022-06-21 | 2022-07-06 | A1430 | 51d | 0d | start on or after 2021-12-02 | عامل [120 h]; مبلط [120 h]; موان [120 h]; مقطوعيه سيراميك [898905 مقطوعيه] | 1,030,905.16 |
| A1450 |  | Painting Works B_D | 6d | 2022-07-07 | 2022-07-14 | A1440 | 69d | 0d | start on or after 2021-12-02 | نقاش [54 h]; عامل [54 h]; مقطوعيه دهانات [383327 مقطوعيه] | 423,826.65 |
| A1460 |  | Alumital Fixtures B_D | 4d | 2022-07-15 | 2022-07-20 | A1450 | 75d | 0d | start on or after 2021-12-02 | عامل [16 h]; صنايعى الوميتال [8 h]; مقطوعيه الوميتال [471174 مقطوعيه] | 480,373.67 |
| A1470 |  | Finishing Plumbing Fixtures B_D | 3d | 2022-07-21 | 2022-07-25 | A1460 | 79d | 1d | start on or after 2021-12-02 | سباك [24 h]; عامل [24 h]; مقطوعيه سباكه [360937 مقطوعيه] | 378,937 |
| A1480 |  | Finishing Electrical Fixtures B_D | 3d | 2022-07-21 | 2022-07-25 | A1460 | 79d | 1d | start on or after 2021-12-02 | كهربائى [24 h]; عامل [12 h]; مقطوعيه كهربه [4921875 مقطوعيه] | 4,938,075 |
| A1490 |  | Finishing doors and windows Fixtures B_D | 4d | 2022-07-21 | 2022-07-26 | A1460 | 75d | 0d | start on or after 2021-12-02 | نجار [20 h]; مساعد نجار [20 h]; مقطوعيه ابواب وشبابيك [434591 مقطوعيه] | 446,091.24 |
| A1500 |  | Cleaning and Closing B_D | 3d | 2022-07-27 | 2022-07-29 | A1470, A1480, A1490 | 78d | 30d | start on or after 2021-12-02 | عامل [36 h] | 12,600 |

| ID | WBS | Activity | Duration | Start | Finish | Predecessors | Total float | Free float | Constraint | Resources | Cost |
| --- | --- | --- | --- | --- | --- | --- | --- | --- | --- | --- | --- |
|  | 20 | **Ground Floor Works** |  | 2022-05-11 | 2022-09-14 |  |  |  |  |  |  |
|  | 01 | **Concrete Works G.F** |  | 2022-05-11 | 2022-07-06 |  |  |  |  |  |  |
|  | 10 | **Reinforced Concrete G.F Columns** |  | 2022-05-11 | 2022-06-06 |  |  |  |  |  |  |
| A1510 |  | Erect Formworks 3 sides G.F.Col | 7d | 2022-05-11 | 2022-05-19 | A1350 | -13d | 1d | start on or after 2021-12-02 | عامل [56 h]; مساعد نجار [56 h]; نجار [56 h] | 51,800 |
| A1520 |  | Blacksmithing G.F.Col | 8d | 2022-05-11 | 2022-05-20 | A1350 | -14d | 0d | start on or after 2021-12-02 | حداد [80 h]; مساعد حداد [80 h]; عامل [80 h] | 74,000 |
| A1530 |  | Close Formworks Fourth side G.F.Col | 4d | 2022-05-23 | 2022-05-26 | A1520, A1510 | -14d | 0d | start on or after 2021-12-02 | عامل [16 h]; نجار [16 h]; مساعد نجار [16 h] | 14,800 |
| A1540 |  | Pouring G_F.Col | 1d | 2022-05-27 | 2022-05-27 | A1530 | -14d | 0d | start on or after 2021-12-02 | يوميه البامب [1 يوميه]; يوميه عربيه خرسانه [3 يوميه]; حديد [19 طن]; خشب [187 لوح]; مياه [10 م3]; توريد خرسانه مسلحه [187 م3] | 1,416,075 |
| A1550 |  | Deshuttering Formworks G.F.Col | 6d | 2022-05-30 | 2022-06-06 | A1540 | -14d | 0d | start on or after 2021-12-02 | نجار [72 h]; مساعد نجار [72 h]; عامل [72 h] | 66,600 |
|  | 20 | **Reinforced Concrete G.F Slab** |  | 2022-06-07 | 2022-07-06 |  |  |  |  |  |  |
| A1560 |  | Erect Formworks G.F.Slab | 10d | 2022-06-07 | 2022-06-20 | A1550, A1360 | -11d | 3d | start on or after 2021-12-02 | عامل [270 h]; نجار [270 h]; مساعد نجار [270 h] | 249,750 |
| A1570 |  | Blacksmithing G.F.Slab | 13d | 2022-06-07 | 2022-06-23 | A1550 | -14d | 0d | start on or after 2021-12-02 | حداد [720 h]; مساعد حداد [720 h]; عامل [720 h] | 666,000 |
| A1590 |  | Pouring G.F.Slab | 2d | 2022-06-24 | 2022-06-27 | A1570, A1560 | -14d | 0d | start on or after 2021-12-02 | يوميه البامب [12 يوميه]; يوميه عربيه خرسانه [36 يوميه]; توريد خرسانه مسلحه [540 م3]; حديد [54 طن]; مياه [850 م3]; خشب [540 لوح] | 4,389,700 |
| A1600 |  | Deshuttering Formworks G.F.Slab | 7d | 2022-06-28 | 2022-07-06 | A1590 | 3d | 0d | start on or after 2021-12-02 | عامل [105 h]; مساعد نجار [105 h]; نجار [105 h] | 97,125 |
|  | 02 | **Finishing Works G.F** |  | 2022-07-07 | 2022-09-14 |  |  |  |  |  |  |
| A1620 |  | Brick Works G.F | 7d | 2022-07-07 | 2022-07-15 | A1600, A1380 | 30d | 0d | start on or after 2021-12-02 | عامل [98 h]; بناء [98 h]; موان [98 h]; طوب اسمنتى [99467 م2] | 2,902,676 |
| A1630 |  | Conch Works | 8d | 2022-07-18 | 2022-07-27 | A1620, A1390 | 30d | 0d | start on or after 2021-12-02 | مبيض [128 h]; موان [64 h]; عامل [128 h]; اسمنت [33 طن]; رمل [10 م3]; مياه [16 م3] | 185,350 |
| A1640 |  | Erect Primary Electrical Works.G.F | 6d | 2022-07-18 | 2022-07-25 | A1400, A1400 FF, A1620 | 32d | 2d | start on or after 2021-12-02 | كهربائى [48 h]; عامل [24 h]; مقطوعيه كهربه [4921875 مقطوعيه] | 4,954,275 |
| A1650 |  | Primary Plumbing Works G.F | 7d | 2022-07-18 | 2022-07-26 | A1620, A1410 | 37d | 28d | start on or after 2021-12-02 | عامل [98 h]; سباك [98 h]; مقطوعيه سباكه [360937 مقطوعيه] | 434,437 |
| A1660 |  | Plastering Works G.F | 1d | 2022-07-28 | 2022-07-28 | A1630, A1640, A1420 | 30d | 0d | start on or after 2021-12-02 | عامل [8 h]; مبيض [8 h]; موان [8 h]; مقطوعيه جبسمبورد [815285 مقطوعيه] | 824,085 |
| A1670 |  | Install Cretal Works G.F | 5d | 2022-07-29 | 2022-08-04 | A1660, A1430 | 30d | 0d | start on or after 2021-12-02 | مقطوعيه اعمال كريتال [3681845 مقطوعيه] | 3,681,845 |
| A1680 |  | Install Ceramics Works G_F | 12d | 2022-08-05 | 2022-08-22 | A1670, A1440 | 30d | 0d | start on or after 2021-12-02 | مبلط [120 h]; موان [120 h]; عامل [120 h]; مقطوعيه سيراميك [898905 مقطوعيه] | 1,030,905 |
| A1690 |  | Painting Works G.F | 6d | 2022-08-23 | 2022-08-30 | A1680, A1450 | 42d | 0d | start on or after 2021-12-02 | عامل [54 h]; نقاش [54 h]; مقطوعيه دهانات [383327 مقطوعيه] | 423,827 |
| A1700 |  | Alumital Fixtures G.F | 4d | 2022-08-31 | 2022-09-05 | A1690, A1460 | 46d | 0d | start on or after 2021-12-02 | صنايعى الوميتال [8 h]; عامل [16 h]; مقطوعيه الوميتال [471174 مقطوعيه] | 480,374 |
| A1710 |  | Finishing Plumbing Fixtures G.F | 3d | 2022-09-06 | 2022-09-08 | A1700, A1470 | 49d | 1d | start on or after 2021-12-02 | سباك [24 h]; عامل [24 h]; مقطوعيه سباكه [360937 مقطوعيه] | 378,937 |
| A1720 |  | Finishing Electrical Fixtures G.F | 3d | 2022-09-06 | 2022-09-08 | A1700, A1480 | 49d | 1d | start on or after 2021-12-02 | عامل [12 h]; كهربائى [24 h]; مقطوعيه كهربه [4921875 مقطوعيه] | 4,938,075 |
| A1730 |  | Finishing doors and windows Fixtures G.F | 4d | 2022-09-06 | 2022-09-09 | A1700, A1490 | 46d | 0d | start on or after 2021-12-02 | مساعد نجار [20 h]; نجار [20 h]; مقطوعيه ابواب وشبابيك [434591 مقطوعيه] | 446,091 |
| A1740 |  | Cleaning and Closing G.F | 3d | 2022-09-12 | 2022-09-14 | A1710, A1720, A1730, A1500 | 48d | 30d | start on or after 2021-12-02 | عامل [36 h] | 12,600 |

| ID | WBS | Activity | Duration | Start | Finish | Predecessors | Total float | Free float | Constraint | Resources | Cost |
| --- | --- | --- | --- | --- | --- | --- | --- | --- | --- | --- | --- |
|  | 30 | **First Floor Works** |  | 2022-06-28 | 2022-10-31 |  |  |  |  |  |  |
|  | 01 | **Concrete Works 1_st.F** |  | 2022-06-28 | 2022-08-24 |  |  |  |  |  |  |
|  | 10 | **Reinforced Concrete 1_st.F Columns** |  | 2022-06-28 | 2022-07-26 |  |  |  |  |  |  |
| A1750 |  | Erect Formworks 3 sides 1_st F.Col | 10d | 2022-06-28 | 2022-07-11 | A1590 | -14d | 0d | start on or after 2021-12-02 | نجار [100 h]; مساعد نجار [100 h]; عامل [100 h] | 92,500 |
| A1760 |  | Blacksmithing 1_st F.Col | 9d | 2022-06-28 | 2022-07-08 | A1590 | -13d | 1d | start on or after 2021-12-02 | عامل [135 h]; حداد [135 h]; مساعد حداد [135 h] | 124,875 |
| A1770 |  | Close Formworks Fourth side 1_st F.Col | 5d | 2022-07-12 | 2022-07-18 | A1760, A1750 | -14d | 0d | start on or after 2021-12-02 | نجار [25 h]; مساعد نجار [25 h]; عامل [25 h] | 23,125 |
| A1780 |  | Pouring 1_st F.Col | 1d | 2022-07-19 | 2022-07-19 | A1770 | -14d | 0d | start on or after 2021-12-02 | يوميه البامب [2 يوميه]; يوميه عربيه خرسانه [4 يوميه]; خشب [334 لوح]; حديد [35 طن]; توريد خرسانه مسلحه [334 م3]; مياه [20 م3] | 2,581,750 |
| A1790 |  | Deshuttering Formworks 1_st F.Col | 5d | 2022-07-20 | 2022-07-26 | A1780 | -14d | 0d | start on or after 2021-12-02 | عامل [50 h]; نجار [50 h]; مساعد نجار [50 h] | 46,250 |
|  | 20 | **Reinforced Concrete 1_st.F Slab** |  | 2022-07-27 | 2022-08-24 |  |  |  |  |  |  |
| A1800 |  | Erect Formworks 1_st F.Slab | 9d | 2022-07-27 | 2022-08-08 | A1790, A1600 | -11d | 3d | start on or after 2021-12-02 | نجار [270 h]; مساعد نجار [270 h]; عامل [270 h] | 249,750 |
| A1810 |  | Blacksmithing 1_st F.Slab | 12d | 2022-07-27 | 2022-08-11 | A1790 | -14d | 0d | start on or after 2021-12-02 | عامل [720 h]; حداد [720 h]; مساعد حداد [720 h] | 666,000 |
| A1830 |  | Pouring 1_st F.Slab | 2d | 2022-08-12 | 2022-08-15 | A1810, A1800 | -14d | 0d | start on or after 2021-12-02 | يوميه عربيه خرسانه [24 يوميه]; يوميه البامب [6 يوميه]; مياه [850 م3]; خشب [540 لوح]; توريد خرسانه مسلحه [540 م3]; حديد [55 طن] | 4,303,300 |
| A1840 |  | Deshuttering Formworks 1_st F.Slab | 7d | 2022-08-16 | 2022-08-24 | A1830 | 3d | 0d | start on or after 2021-12-02 | نجار [105 h]; مساعد نجار [105 h]; عامل [105 h] | 97,125 |
|  | 02 | **Finishing Works 1_st.F** |  | 2022-08-25 | 2022-10-31 |  |  |  |  |  |  |
| A1860 |  | Brick Works 1_st F | 7d | 2022-08-25 | 2022-09-02 | A1840, A1620 | 9d | 0d | start on or after 2021-12-02 | عامل [98 h]; بناء [98 h]; موان [98 h]; طوب اسمنتى [99467 م2] | 2,902,676 |
| A1870 |  | Conch Works | 4d | 2022-09-05 | 2022-09-08 | A1860, A1630 | 12d | 3d | start on or after 2021-12-02 | موان [32 h]; مبيض [64 h]; عامل [64 h]; رمل [10 م3]; اسمنت [33 طن]; مياه [16 م3] | 126,150 |
| A1880 |  | Erect Primary Electrical Works.1_st F | 6d | 2022-09-05 | 2022-09-12 | A1860, A1640 | 10d | 1d | start on or after 2021-12-02 | عامل [24 h]; كهربائى [48 h]; مقطوعيه كهربه [4921875 مقطوعيه] | 4,954,275 |
| A1890 |  | Primary Plumbing Works 1_st F | 7d | 2022-09-05 | 2022-09-13 | A1860, A1650 | 9d | 0d | start on or after 2021-12-02 | سباك [98 h]; عامل [98 h]; مقطوعيه سباكه [360937 مقطوعيه] | 434,437 |
| A1900 |  | Plastering Works 1_st F | 1d | 2022-09-14 | 2022-09-14 | A1870, A1880, A1890, A1660 | 9d | 0d | start on or after 2021-12-02 | عامل [8 h]; مبيض [8 h]; موان [8 h]; مقطوعيه جبسمبورد [815285 مقطوعيه] | 824,085 |
| A1910 |  | Install Cretal Works 1_st F | 4d | 2022-09-15 | 2022-09-20 | A1900, A1670 | 9d | 0d | start on or after 2021-12-02 | مقطوعيه اعمال كريتال [3681845 مقطوعيه] | 3,681,845 |
| A1920 |  | Install Ceramics Works 1_st F | 12d | 2022-09-21 | 2022-10-06 | A1910, A1680 | 9d | 0d | start on or after 2021-12-02 | مبلط [120 h]; موان [120 h]; عامل [120 h]; مقطوعيه سيراميك [898905 مقطوعيه] | 1,030,905 |
| A1930 |  | Painting Works 1_st F | 6d | 2022-10-07 | 2022-10-14 | A1920, A1690 | 15d | 0d | start on or after 2021-12-02 | نقاش [54 h]; عامل [54 h]; مقطوعيه دهانات [383327 مقطوعيه] | 423,827 |
| A1940 |  | Alumital Fixtures 1_st F | 4d | 2022-10-17 | 2022-10-20 | A1930, A1700 | 17d | 0d | start on or after 2021-12-02 | عامل [16 h]; صنايعى الوميتال [8 h]; مقطوعيه الوميتال [471174 مقطوعيه] | 480,374 |
| A1950 |  | Finishing Plumbing Fixtures 1_st F | 3d | 2022-10-21 | 2022-10-25 | A1940, A1710 | 19d | 1d | start on or after 2021-12-02 | سباك [24 h]; عامل [24 h]; مقطوعيه سباكه [360937 مقطوعيه] | 378,937 |
| A1960 |  | Finishing Electrical Fixtures 1_st F | 3d | 2022-10-21 | 2022-10-25 | A1940, A1720 | 19d | 1d | start on or after 2021-12-02 | عامل [12 h]; كهربائى [24 h]; مقطوعيه كهربه [4921875 مقطوعيه] | 4,938,075 |
| A1970 |  | Finishing doors and windows Fixtures 1_st F | 4d | 2022-10-21 | 2022-10-26 | A1940, A1730 | 17d | 0d | start on or after 2021-12-02 | نجار [20 h]; مساعد نجار [20 h]; مقطوعيه ابواب وشبابيك [434591 مقطوعيه] | 446,091 |
| A1980 |  | Cleaning and Closing 1_st F | 3d | 2022-10-27 | 2022-10-31 | A1950, A1960, A1970, A1740 | 18d | 32d | start on or after 2021-12-02 | عامل [36 h] | 12,600 |

| ID | WBS | Activity | Duration | Start | Finish | Predecessors | Total float | Free float | Constraint | Resources | Cost |
| --- | --- | --- | --- | --- | --- | --- | --- | --- | --- | --- | --- |
|  | 40 | **Second Floor Works** |  | 2022-08-16 | 2022-12-19 |  |  |  |  |  |  |
|  | 01 | **Concrete Works 2_nd.F** |  | 2022-08-16 | 2022-10-12 |  |  |  |  |  |  |
|  | 10 | **Reinforced Concrete 2_nd.F Columns** |  | 2022-08-16 | 2022-09-13 |  |  |  |  |  |  |
| A1990 |  | Erect Formworks 3 sides 2_nd F.Col | 10d | 2022-08-16 | 2022-08-29 | A1830 | -14d | 0d | start on or after 2021-12-02 | عامل [100 h]; نجار [100 h]; مساعد نجار [100 h] | 92,500 |
| A2000 |  | Blacksmithing 2_nd F.Col | 9d | 2022-08-16 | 2022-08-26 | A1830 | -13d | 1d | start on or after 2021-12-02 | حداد [135 h]; مساعد حداد [135 h]; عامل [135 h] | 124,875 |
| A2010 |  | Close Formworks Fourth side 2_nd F.Col | 5d | 2022-08-30 | 2022-09-05 | A2000, A1990 | -14d | 0d | start on or after 2021-12-02 | عامل [25 h]; نجار [25 h]; مساعد نجار [25 h] | 23,125 |
| A2020 |  | Pouring 2_nd F.Col | 1d | 2022-09-06 | 2022-09-06 | A2010 | -14d | 0d | start on or after 2021-12-02 | يوميه البامب [2 يوميه]; يوميه عربيه خرسانه [4 يوميه]; حديد [35 طن]; خشب [334 لوح]; توريد خرسانه مسلحه [334 م3]; مياه [20 م3] | 2,581,750 |
| A2030 |  | Deshuttering Formworks 2_nd F.Col | 5d | 2022-09-07 | 2022-09-13 | A2020 | -14d | 0d | start on or after 2021-12-02 | نجار [50 h]; مساعد نجار [50 h]; عامل [50 h] | 46,250 |
|  | 20 | **Reinforced Concrete 2_nd.F Slab** |  | 2022-09-14 | 2022-10-12 |  |  |  |  |  |  |
| A2040 |  | Erect Formworks 2_nd F.Slab | 9d | 2022-09-14 | 2022-09-26 | A2030, A1840 | -11d | 3d | start on or after 2021-12-02 | عامل [270 h]; نجار [270 h]; مساعد نجار [270 h] | 249,750 |
| A2050 |  | Blacksmithing 2_nd F.Slab | 12d | 2022-09-14 | 2022-09-29 | A2030 | -14d | 0d | start on or after 2021-12-02 | حداد [720 h]; مساعد حداد [720 h]; عامل [720 h] | 666,000 |
| A2070 |  | Pouring 2_nd F.Slab | 2d | 2022-09-30 | 2022-10-03 | A2050, A2040 | -14d | 0d | start on or after 2021-12-02 | يوميه البامب [6 يوميه]; يوميه عربيه خرسانه [24 يوميه]; مياه [850 م3]; خشب [540 لوح]; حديد [55 طن]; توريد خرسانه مسلحه [540 م3] | 4,303,300 |
| A2080 |  | Deshuttering Formworks 2_nd F.Slab | 7d | 2022-10-04 | 2022-10-12 | A2070 | -14d | 0d | start on or after 2021-12-02 | عامل [105 h]; نجار [105 h]; مساعد نجار [105 h] | 97,125 |
|  | 02 | **Finishing Works 2_nd.F** |  | 2022-10-13 | 2022-12-19 |  |  |  |  |  |  |
| A2100 |  | Brick Works 2_nd F | 7d | 2022-10-13 | 2022-10-21 | A2080, A1860 | -14d | 0d | start on or after 2021-12-02 | عامل [98 h]; بناء [98 h]; موان [98 h]; طوب اسمنتى [99467 م2] | 2,902,676 |
| A2110 |  | Conch Works | 4d | 2022-10-24 | 2022-10-27 | A2100, A1870 | -11d | 3d | start on or after 2021-12-02 | عامل [64 h]; مبيض [64 h]; موان [32 h]; رمل [10 م3]; مياه [16 م3]; اسمنت [33 طن] | 126,150 |
| A2120 |  | Erect Primary Electrical Works.2_nd F | 6d | 2022-10-24 | 2022-10-31 | A2100, A1880 | -13d | 1d | start on or after 2021-12-02 | كهربائى [48 h]; عامل [24 h]; مقطوعيه كهربه [4921875 مقطوعيه] | 4,954,275 |
| A2130 |  | Primary Plumbing Works 2_nd F | 7d | 2022-10-24 | 2022-11-01 | A2100, A1890 | -14d | 0d | start on or after 2021-12-02 | سباك [98 h]; عامل [98 h]; مقطوعيه سباكه [360937 مقطوعيه] | 434,437 |
| A2140 |  | Plastering Works 2_nd F | 1d | 2022-11-02 | 2022-11-02 | A2110, A2120, A2130, A1900 | -14d | 0d | start on or after 2021-12-02 | عامل [8 h]; مبيض [8 h]; موان [8 h]; مقطوعيه جبسمبورد [815285 مقطوعيه] | 824,085 |
| A2150 |  | Install Cretal Works 2_nd F | 4d | 2022-11-03 | 2022-11-08 | A2140, A1910 | -14d | 0d | start on or after 2021-12-02 | مقطوعيه اعمال كريتال [3681845 مقطوعيه] | 3,681,845 |
| A2160 |  | Install Ceramics Works 2_nd F | 12d | 2022-11-09 | 2022-11-24 | A2150, A1920 | -14d | 0d | start on or after 2021-12-02 | موان [120 h]; مبلط [120 h]; عامل [120 h]; مقطوعيه سيراميك [898905 مقطوعيه] | 1,030,905 |
| A2170 |  | Painting Works 2_nd F | 6d | 2022-11-25 | 2022-12-02 | A2160, A1930 | -14d | 0d | start on or after 2021-12-02 | نقاش [54 h]; عامل [54 h]; مقطوعيه دهانات [383327 مقطوعيه] | 423,827 |
| A2180 |  | Alumital Fixtures 2_nd F | 4d | 2022-12-05 | 2022-12-08 | A2170, A1940 | -14d | 0d | start on or after 2021-12-02 | صنايعى الوميتال [8 h]; عامل [16 h]; مقطوعيه الوميتال [471174 مقطوعيه] | 480,374 |
| A2190 |  | Finishing Plumbing Fixtures 2_nd F | 3d | 2022-12-09 | 2022-12-13 | A2180, A1950 | -13d | 1d | start on or after 2021-12-02 | عامل [24 h]; سباك [24 h]; مقطوعيه سباكه [360937 مقطوعيه] | 378,937 |
| A2200 |  | Finishing Electrical Fixtures 2_nd F | 3d | 2022-12-09 | 2022-12-13 | A2180, A1960 | -13d | 1d | start on or after 2021-12-02 | كهربائى [24 h]; عامل [12 h]; مقطوعيه كهربه [4921875 مقطوعيه] | 4,938,075 |
| A2210 |  | Finishing doors and windows Fixtures 2_nd F | 4d | 2022-12-09 | 2022-12-14 | A2180, A1970 | -14d | 0d | start on or after 2021-12-02 | نجار [20 h]; مساعد نجار [20 h]; مقطوعيه ابواب وشبابيك [434591 مقطوعيه] | 446,091 |
| A2220 |  | Cleaning and Closing 2_nd F | 3d | 2022-12-15 | 2022-12-19 | A2190, A2200, A2210, A1980 | -14d | 0d | start on or after 2021-12-02 | عامل [36 h] | 12,600 |

# sports building

Schedule from Primavera P6, 2021-12-02 to 2022-11-14, data date 2021-12-01, costs in USD.
Must finish by 2022-12-01

## Calendars

- Corporate - Standard Full Time: Mon-Fri 08:00-16:00; Sat-Sun off.
- ebram: Mon-Thu 08:00-12:00, 13:00-17:00; Fri-Sun 08:00-16:00.

## Resources

| Resource | Group | Unit | Rate | Notes |
| --- | --- | --- | --- | --- |
| حفار | equipment |  | 5520 | ï»؟ |
| عامل | labor |  | 350 | ï»؟ |
| قلاب | equipment |  | 3293 | ï»؟ |
| لودر | equipment |  | 4796 | ï»؟ |
| دكاك | equipment |  | 3250 | ï»؟ |
| فنى عزل | labor |  | 350 | ï»؟ |
| بناء | labor |  | 500 | ï»؟ |
| موان | labor |  | 350 | ï»؟ |
| نجار | labor |  | 325 | ï»؟ |
| مساعد نجار | labor |  | 250 | ï»؟ |
| يوميه البامب | material | يوميه | 12000 | ï»؟ |
| يوميه عربيه خرسانه | material | يوميه | 5700 | ï»؟ |
| توريد خ . ع رتبه 20 | material | م3 | 1450 | ï»؟ |
| خشب | material | لوح | 175 | ï»؟ |
| مياه | material | م3 | 100 | ï»؟ |
| حداد | labor |  | 325 | ï»؟ |
| مساعد حداد | labor |  | 250 | ï»؟ |
| توريد خرسانه مسلحه | material | م3 | 1750 | ï»؟ |
| حديد | material | طن | 54000 | ï»؟ |
| طوب اسمنتى | material | م2 | 28 | ï»؟ |
| مبيض | labor |  | 400 | ï»؟ |
| رمل | material | م3 | 100 | ï»؟ |
| اسمنت | material | طن | 1950 | ï»؟ |
| كهربائى | labor |  | 500 | ï»؟ |
| مقطوعيه كهربه | material | مقطوعيه | 1 | ï»؟ |
| سباك | labor |  | 400 | ï»؟ |
| مقطوعيه سباكه | material | مقطوعيه | 1 | ï»؟ |
| مقطوعيه جبسمبورد | material | مقطوعيه | 1 | ï»؟ |
| مقطوعيه اعمال كريتال | material | مقطوعيه | 1 | ï»؟ |
| مبلط | labor |  | 400 | ï»؟ |
| مقطوعيه سيراميك | material | مقطوعيه | 1 | ï»؟ |
| نقاش | labor |  | 400 | ï»؟ |
| مقطوعيه دهانات | material | مقطوعيه | 1 | ï»؟ |
| صنايعى الوميتال | labor |  | 450 | ï»؟ |
| مقطوعيه الوميتال | material | مقطوعيه | 1 | ï»؟ |
| مقطوعيه ابواب وشبابيك | material | مقطوعيه | 1 | ï»؟ |

## Schedule

| ID | WBS | Activity | Duration | Start | Finish | Predecessors | Total float | Free float | Constraint | Resources | Cost |
| --- | --- | --- | --- | --- | --- | --- | --- | --- | --- | --- | --- |
|  | 01 | **Mobilization / Demobilization** |  | 2021-12-02 | 2021-12-22 |  |  |  |  |  |  |
| A1110 |  | Site Clean | 3d | 2021-12-02 | 2021-12-06 | A1000 (other project) | 11d | 0d | start on or after 2021-12-01 |  |  |
| A1120 |  | Site Investigation | 4d | 2021-12-07 | 2021-12-10 | A1110 | 11d | 0d | start on or after 2021-12-02 |  |  |
| A1100 |  | Mobilization | 4d | 2021-12-13 | 2021-12-16 | A1120 | 12d | 1d | start on or after 2021-12-02 |  |  |
| A1130 |  | Temporary Facilities | 5d | 2021-12-13 | 2021-12-17 | A1120 | 11d | 0d | start on or after 2021-12-02 |  |  |
| A1140 |  | Surveying Works | 3d | 2021-12-20 | 2021-12-22 | A1100, A1130 | 11d | 0d | start on or after 2021-12-02 |  |  |
|  | 02 | **Block No.1** |  | 2021-12-23 | 2022-11-14 |  |  |  |  |  |  |
|  | 10 | **Building No.1** |  | 2021-12-23 | 2022-11-14 |  |  |  |  |  |  |
|  | 01 | **Sub Structure Works** |  | 2021-12-23 | 2022-03-14 |  |  |  |  |  |  |
|  | 10 | **Soil Works** |  | 2021-12-23 | 2022-03-14 |  |  |  |  |  |  |
| A1160 |  | Excavation Works | 8d | 2021-12-23 | 2022-01-03 | A1140 | 11d | 0d | start on or after 2021-12-02 | حفار [16 h]; عامل [32 h]; قلاب [32 h] | 204,896 |
| A1180 |  | Footing Insulation | 3d | 2022-02-18 | 2022-02-22 | A1260 | 11d | 0d | start on or after 2021-12-02 | فنى عزل [15 h]; عامل [15 h] | 10,500 |
| A1190 |  | Essia Mason | 7d | 2022-02-23 | 2022-03-03 | A1180 | 11d | 0d | start on or after 2021-12-02 | عامل [35 h]; بناء [35 h]; موان [35 h] | 42,000 |
| A1170 |  | Backfilling Works | 7d | 2022-03-04 | 2022-03-14 | A1190 | 11d | 0d | start on or after 2021-12-02 | لودر [14 h]; عامل [42 h]; دكاك [14 h] | 127,344 |
|  | 20 | **Concrete works for Foundation** |  | 2022-01-04 | 2022-02-17 |  |  |  |  |  |  |
|  | 01 | **Plain Concrete Foundation** |  | 2022-01-04 | 2022-01-19 |  |  |  |  |  |  |
| A1200 |  | Erect Formworks P.C.F | 7d | 2022-01-04 | 2022-01-12 | A1160 | 11d | 0d | start on or after 2021-12-02 | عامل [56 h]; نجار [56 h]; مساعد نجار [56 h] | 51,800 |
| A1210 |  | Pouring P.C.F | 1d | 2022-01-13 | 2022-01-13 | A1200 | 11d | 0d | start on or after 2021-12-02 | يوميه البامب [1 يوميه]; يوميه عربيه خرسانه [3 يوميه]; توريد خ . ع رتبه 20 [31 م3]; خشب [31 لوح]; مياه [10 م3] | 80,475 |
| A1220 |  | Deshuttering Formworks P.C.F | 4d | 2022-01-14 | 2022-01-19 | A1210 | 11d | 0d | start on or after 2021-12-02 | نجار [16 h]; مساعد نجار [16 h]; عامل [16 h] | 14,800 |
|  | 02 | **Reinforced Concrete Foundation** |  | 2022-01-20 | 2022-02-17 |  |  |  |  |  |  |
| A1230 |  | Erect Formworks R.C.F | 12d | 2022-01-20 | 2022-02-04 | A1220 | 12d | 1d | start on or after 2021-12-02 | عامل [144 h]; نجار [144 h]; مساعد نجار [144 h] | 133,200 |
| A1240 |  | Blacksmithing R.C.F | 13d | 2022-01-20 | 2022-02-07 | A1220 | 11d | 0d | start on or after 2021-12-02 | حداد [143 h]; مساعد حداد [143 h]; عامل [143 h] | 132,275 |
| A1250 |  | Pouring R.C.F | 2d | 2022-02-08 | 2022-02-09 | A1240, A1230 | 11d | 0d | start on or after 2021-12-02 | يوميه البامب [2 يوميه]; يوميه عربيه خرسانه [4 يوميه]; مياه [10 م3]; خشب [66 لوح]; توريد خرسانه مسلحه [66 م3]; حديد [545 طن] | 29,604,850 |
| A1260 |  | Deshuttering Formworks R.C.F | 6d | 2022-02-10 | 2022-02-17 | A1250 | 11d | 0d | start on or after 2021-12-02 | عامل [90 h]; نجار [90 h]; مساعد نجار [90 h] | 83,250 |

| ID | WBS | Activity | Duration | Start | Finish | Predecessors | Total float | Free float | Constraint | Resources | Cost |
| --- | --- | --- | --- | --- | --- | --- | --- | --- | --- | --- | --- |
|  | 02 | **Super Structure Works** |  | 2022-03-15 | 2022-11-14 |  |  |  |  |  |  |
|  | 10 | **Bd Floor Works** |  | 2022-03-15 | 2022-10-06 |  |  |  |  |  |  |
|  | 01 | **Concrete Works Bd** |  | 2022-03-15 | 2022-04-28 |  |  |  |  |  |  |
|  | 10 | **Reinforced Concrete Bd Columns** |  | 2022-03-15 | 2022-04-01 |  |  |  |  |  |  |
| A1270 |  | Erect Formworks 3 sides B_D.Col | 4d | 2022-03-15 | 2022-03-18 | A1170 | 11d | 0d | start on or after 2021-12-02 | نجار [16 h]; مساعد نجار [16 h]; عامل [16 h] | 14,800 |
| A1280 |  | Blacksmithing B_D.Col | 4d | 2022-03-21 | 2022-03-24 | A1270 | 11d | 0d | start on or after 2021-12-02 | عامل [16 h]; حداد [16 h]; مساعد حداد [16 h] | 14,800 |
| A1290 |  | Close Formworks Fourth side B_D.Col | 2d | 2022-03-25 | 2022-03-28 | A1280 | 11d | 0d | start on or after 2021-12-02 | نجار [8 h]; مساعد نجار [8 h]; عامل [8 h] | 7,400 |
| A1300 |  | Pouring B_D.Col | 1d | 2022-03-29 | 2022-03-29 | A1290 | 11d | 0d | start on or after 2021-12-02 | يوميه البامب [1 يوميه]; يوميه عربيه خرسانه [3 يوميه]; حديد [3 طن]; خشب [23 لوح]; توريد خرسانه مسلحه [23 م3]; مياه [10 م3] | 236,375 |
| A1310 |  | Deshuttering Formworks B_D.Col | 3d | 2022-03-30 | 2022-04-01 | A1300 | 11d | 0d | start on or after 2021-12-02 | عامل [30 h]; نجار [30 h]; مساعد نجار [30 h] | 27,750 |
|  | 20 | **Reinforced Concrete Bd Slab** |  | 2022-04-04 | 2022-04-28 |  |  |  |  |  |  |
| A1320 |  | Erect Formworks B_D.Slab | 6d | 2022-04-04 | 2022-04-11 | A1310 | 14d | 3d | start on or after 2021-12-02 | نجار [30 h]; مساعد نجار [30 h]; عامل [30 h] | 27,750 |
| A1330 |  | Blacksmithing B_D.Slab | 9d | 2022-04-04 | 2022-04-14 | A1310 | 11d | 0d | start on or after 2021-12-02 | عامل [54 h]; حداد [54 h]; مساعد حداد [54 h] | 49,950 |
| A1350 |  | Pouring B_D.Slab | 1d | 2022-04-15 | 2022-04-15 | A1330, A1320 | 11d | 0d | start on or after 2021-12-02 | يوميه البامب [1 يوميه]; يوميه عربيه خرسانه [3 يوميه]; مياه [65 م3]; حديد [25 طن]; توريد خرسانه مسلحه [250 م3]; خشب [250 لوح] | 1,866,850 |
| A1360 |  | Deshuttering Formworks B_D.Slab | 6d | 2022-04-18 | 2022-04-25 | A1350 | 25d | 0d | start on or after 2021-12-02 | نجار [30 h]; مساعد نجار [30 h]; عامل [30 h] | 27,750 |
| A1370 |  | Deckind Slab P.C for B_D | 3d | 2022-04-26 | 2022-04-28 | A1360 | 80d | 69d | start on or after 2021-12-02 | عامل [9 h]; لودر [3 h]; دكاك [3 h] | 27,288 |
|  | 02 | **Finishing Works Bd** |  | 2022-08-04 | 2022-10-06 |  |  |  |  |  |  |
| A1380 |  | Brick Works B_D | 5d | 2022-08-04 | 2022-08-10 | A1370, A2070 | 11d | 0d | start on or after 2021-12-02 | عامل [50 h]; بناء [50 h]; موان [50 h]; طوب اسمنتى [56838.2 م2] | 1,651,469.75 |
| A1390 |  | Conch work | 2d | 2022-08-11 | 2022-08-12 | A1380 | 23d | 3d | start on or after 2021-12-02 | موان [20 h]; مبيض [20 h]; عامل [20 h]; رمل [6 م3]; اسمنت [19 طن]; مياه [10 م3] | 60,650 |
| A1400 |  | Erect Primary Electrical Works.B_D | 5d | 2022-08-11 | 2022-08-17 | A1380 | 13d | 0d | start on or after 2021-12-02 | كهربائى [30 h]; عامل [15 h]; مقطوعيه كهربه [2812500 مقطوعيه] | 2,832,750 |
| A1410 |  | Primary Plumbing Works B_D | 7d | 2022-08-11 | 2022-08-19 | A1380 | 11d | 0d | start on or after 2021-12-02 | سباك [42 h]; عامل [42 h]; مقطوعيه سباكه [206250 مقطوعيه] | 237,750 |
| A1420 |  | Plastering Works B_D | 5d | 2022-08-22 | 2022-08-26 | A1400, A1410 | 11d | 0d | start on or after 2021-12-02 | مبيض [25 h]; موان [25 h]; عامل [25 h]; مقطوعيه جبسمبورد [465877 مقطوعيه] | 493,376.9 |
| A1430 |  | Install Cretal Works B_D | 6d | 2022-08-29 | 2022-09-05 | A1420 | 11d | 0d | start on or after 2021-12-02 | مقطوعيه اعمال كريتال [2103912 مقطوعيه] | 2,103,911.5 |
| A1440 |  | Install Ceramics Works B_D | 4d | 2022-09-06 | 2022-09-09 | A1430 | 11d | 0d | start on or after 2021-12-02 | مبلط [20 h]; موان [20 h]; عامل [20 h]; مقطوعيه سيراميك [513660 مقطوعيه] | 535,660.09 |
| A1450 |  | Painting Works B_D | 9d | 2022-09-12 | 2022-09-22 | A1440 | 11d | 0d | start on or after 2021-12-02 | نقاش [72 h]; عامل [72 h]; مقطوعيه دهانات [219044 مقطوعيه] | 273,043.8 |
| A1460 |  | Alumital Fixtures B_D | 4d | 2022-09-23 | 2022-09-28 | A1450 | 26d | 0d | start on or after 2021-12-02 | عامل [24 h]; صنايعى الوميتال [12 h]; مقطوعيه الوميتال [269242 مقطوعيه] | 283,042.1 |
| A1470 |  | Finishing Plumbing Fixtures B_D | 2d | 2022-09-29 | 2022-09-30 | A1460 | 30d | 1d | start on or after 2021-12-02 | سباك [16 h]; عامل [16 h]; مقطوعيه سباكه [206250 مقطوعيه] | 218,250 |
| A1480 |  | Finishing Electrical Fixtures B_D | 2d | 2022-09-29 | 2022-09-30 | A1460 | 30d | 1d | start on or after 2021-12-02 | عامل [6 h]; كهربائى [12 h]; مقطوعيه كهربه [2812500 مقطوعيه] | 2,820,600 |
| A1490 |  | Finishing doors and windows Fixtures B_D | 3d | 2022-09-29 | 2022-10-03 | A1460 | 29d | 0d | start on or after 2021-12-02 | نجار [15 h]; مساعد نجار [15 h]; مقطوعيه ابواب وشبابيك [248338 مقطوعيه] | 256,962.85 |
| A1500 |  | Cleaning and Closing B_D | 3d | 2022-10-04 | 2022-10-06 | A1470, A1480, A1490 | 29d | 6d | start on or after 2021-12-02 | عامل [36 h] | 12,600 |

| ID | WBS | Activity | Duration | Start | Finish | Predecessors | Total float | Free float | Constraint | Resources | Cost |
| --- | --- | --- | --- | --- | --- | --- | --- | --- | --- | --- | --- |
|  | 20 | **Ground Floor Works** |  | 2022-04-21 | 2022-10-19 |  |  |  |  |  |  |
|  | 01 | **Concrete Works G.F** |  | 2022-04-21 | 2022-06-01 |  |  |  |  |  |  |
|  | 10 | **Reinforced Concrete G.F Columns** |  | 2022-04-21 | 2022-05-10 |  |  |  |  |  |  |
| A1510 |  | Erect Formworks 3 sides G.F.Col | 4d | 2022-04-21 | 2022-04-26 | A1350 FS+3d | 11d | 0d | start on or after 2021-12-02 | عامل [16 h]; نجار [16 h]; مساعد نجار [16 h] | 14,800 |
| A1520 |  | Blacksmithing G.F.Col | 4d | 2022-04-27 | 2022-05-02 | A1510 | 11d | 0d | start on or after 2021-12-02 | حداد [16 h]; مساعد حداد [16 h]; عامل [16 h] | 14,800 |
| A1530 |  | Close Formworks Fourth side G.F.Col | 2d | 2022-05-03 | 2022-05-04 | A1520 | 11d | 0d | start on or after 2021-12-02 | عامل [8 h]; نجار [8 h]; مساعد نجار [8 h] | 7,400 |
| A1540 |  | Pouring G.F.Col | 1d | 2022-05-05 | 2022-05-05 | A1530 | 11d | 0d | start on or after 2021-12-02 | يوميه البامب [1 يوميه]; يوميه عربيه خرسانه [3 يوميه]; خشب [70 لوح]; توريد خرسانه مسلحه [70 م3]; مياه [10 م3]; حديد [10 طن] | 704,850 |
| A1550 |  | Deshuttering Formworks G_F.Col | 3d | 2022-05-06 | 2022-05-10 | A1540 | 11d | 0d | start on or after 2021-12-02 | عامل [30 h]; نجار [30 h]; مساعد نجار [30 h] | 27,750 |
|  | 20 | **Reinforced Concrete G.F Slab** |  | 2022-05-11 | 2022-06-01 |  |  |  |  |  |  |
| A1560 |  | Erect Formworks G.F.Slab | 6d | 2022-05-11 | 2022-05-18 | A1550, A1360 | 14d | 3d | start on or after 2021-12-02 | نجار [30 h]; مساعد نجار [30 h]; عامل [30 h] | 27,750 |
| A1570 |  | Blacksmithing G.F.Slab | 9d | 2022-05-11 | 2022-05-23 | A1550 | 11d | 0d | start on or after 2021-12-02 | عامل [54 h]; حداد [54 h]; مساعد حداد [54 h] | 49,950 |
| A1590 |  | Pouring G.F.Slab | 1d | 2022-05-24 | 2022-05-24 | A1570, A1560 | 11d | 0d | start on or after 2021-12-02 | يوميه البامب [1 يوميه]; يوميه عربيه خرسانه [3 يوميه]; حديد [35 طن]; خشب [336 لوح]; توريد خرسانه مسلحه [336 م3]; مياه [170 م3] | 2,582,900 |
| A1600 |  | Deshuttering Formworks G.F.Slab | 6d | 2022-05-25 | 2022-06-01 | A1590 | 67d | 50d | start on or after 2021-12-02 | نجار [30 h]; مساعد نجار [30 h]; عامل [30 h] | 27,750 |
|  | 02 | **Finishing Works G.F** |  | 2022-08-11 | 2022-10-19 |  |  |  |  |  |  |
| A1620 |  | Brick Works G.F | 5d | 2022-08-11 | 2022-08-17 | A1600, A1380 | 17d | 0d | start on or after 2021-12-02 | عامل [50 h]; بناء [50 h]; موان [50 h]; طوب اسمنتى [56838 م2] | 1,651,464 |
| A1630 |  | Conch work | 2d | 2022-08-18 | 2022-08-19 | A1620, A1390 | 20d | 3d | start on or after 2021-12-02 | موان [20 h]; مبيض [20 h]; عامل [20 h]; اسمنت [19 طن]; رمل [6 م3]; مياه [10 م3] | 60,650 |
| A1640 |  | Erect Primary Electrical Works.G.F | 5d | 2022-08-18 | 2022-08-24 | A1400, A1400 FF | 17d | 0d | start on or after 2021-12-02 | عامل [15 h]; كهربائى [30 h]; مقطوعيه كهربه [2812500 مقطوعيه] | 2,832,750 |
| A1650 |  | Primary Plumbing Works G.F | 7d | 2022-08-22 | 2022-08-30 | A1620, A1410 | 15d | 0d | start on or after 2021-12-02 | سباك [42 h]; عامل [42 h]; مقطوعيه سباكه [206250 مقطوعيه] | 237,750 |
| A1660 |  | Plastering Works G.F | 5d | 2022-08-29 | 2022-09-02 | A1630, A1640, A1420 | 15d | 1d | start on or after 2021-12-02 | عامل [25 h]; مبيض [25 h]; موان [25 h]; مقطوعيه جبسمبورد [465877 مقطوعيه] | 493,377 |
| A1670 |  | Install Cretal Works G.F | 6d | 2022-09-06 | 2022-09-13 | A1660, A1430 | 14d | 0d | start on or after 2021-12-02 | مقطوعيه اعمال كريتال [2103912 مقطوعيه] | 2,103,912 |
| A1680 |  | Install Ceramics Works G.F | 4d | 2022-09-14 | 2022-09-19 | A1670, A1440 | 14d | 3d | start on or after 2021-12-02 | موان [32 h]; مبلط [32 h]; عامل [32 h]; مقطوعيه سيراميك [513660 مقطوعيه] | 548,860 |
| A1690 |  | Painting Works G.F | 9d | 2022-09-23 | 2022-10-05 | A1680, A1450 | 11d | 0d | start on or after 2021-12-02 | عامل [72 h]; نقاش [72 h]; مقطوعيه دهانات [219044 مقطوعيه] | 273,044 |
| A1700 |  | Alumital Fixtures G.F | 4d | 2022-10-06 | 2022-10-11 | A1690, A1460 | 21d | 0d | start on or after 2021-12-02 | صنايعى الوميتال [12 h]; عامل [24 h]; مقطوعيه الوميتال [269242 مقطوعيه] | 283,042 |
| A1710 |  | Finishing Plumbing Fixtures G.F | 2d | 2022-10-12 | 2022-10-13 | A1700, A1470 | 24d | 1d | start on or after 2021-12-02 | عامل [16 h]; سباك [16 h]; مقطوعيه سباكه [206250 مقطوعيه] | 218,250 |
| A1720 |  | Finishing Electrical Fixtures G.F | 2d | 2022-10-12 | 2022-10-13 | A1700, A1480 | 24d | 1d | start on or after 2021-12-02 | كهربائى [12 h]; عامل [6 h]; مقطوعيه كهربه [2812500 مقطوعيه] | 2,820,600 |
| A1730 |  | Finishing doors and windows Fixtures G.F | 3d | 2022-10-12 | 2022-10-14 | A1700, A1490 | 23d | 0d | start on or after 2021-12-02 | نجار [15 h]; مساعد نجار [15 h]; مقطوعيه ابواب وشبابيك [248338 مقطوعيه] | 256,963 |
| A1740 |  | Cleaning and Closing G.F | 3d | 2022-10-17 | 2022-10-19 | A1710, A1720, A1730, A1500 | 23d | 6d | start on or after 2021-12-02 | عامل [36 h] | 12,600 |

| ID | WBS | Activity | Duration | Start | Finish | Predecessors | Total float | Free float | Constraint | Calendar | Resources | Cost |
| --- | --- | --- | --- | --- | --- | --- | --- | --- | --- | --- | --- | --- |
|  | 30 | **First Floor Works** |  | 2022-05-30 | 2022-11-01 |  |  |  |  |  |  |  |
|  | 01 | **Concrete Works 1_st.F** |  | 2022-05-30 | 2022-07-05 |  |  |  |  |  |  |  |
|  | 10 | **Reinforced Concrete 1_st.F Columns** |  | 2022-05-30 | 2022-06-16 |  |  |  |  |  |  |  |
| A1750 |  | Erect Formworks 3 sides 1_st F.Col | 4d | 2022-05-30 | 2022-06-02 | A1590 FS+3d | 11d | 0d | start on or after 2021-12-02 |  | عامل [16 h]; نجار [16 h]; مساعد نجار [16 h] | 14,800 |
| A1760 |  | Blacksmithing 1_st F.Col | 4d | 2022-06-03 | 2022-06-08 | A1750 | 11d | 0d | start on or after 2021-12-02 |  | مساعد حداد [16 h]; حداد [16 h]; عامل [16 h] | 14,800 |
| A1770 |  | Close Formworks Fourth side 1_st F.Col | 2d | 2022-06-09 | 2022-06-10 | A1760 | 11d | 0d | start on or after 2021-12-02 |  | عامل [8 h]; نجار [8 h]; مساعد نجار [8 h] | 7,400 |
| A1780 |  | Pouring 1_st F.Col | 1d | 2022-06-13 | 2022-06-13 | A1770 | 11d | 0d | start on or after 2021-12-02 |  | يوميه البامب [1 يوميه]; يوميه عربيه خرسانه [3 يوميه]; مياه [10 م3]; خشب [70 لوح]; توريد خرسانه مسلحه [70 م3]; حديد [10 طن] | 704,850 |
| A1790 |  | Deshuttering Formworks 1_st F.Col | 3d | 2022-06-14 | 2022-06-16 | A1780 | 11d | 0d | start on or after 2021-12-02 |  | نجار [30 h]; مساعد نجار [30 h]; عامل [30 h] | 27,750 |
|  | 20 | **Reinforced Concrete 1_st.F Slab** |  | 2022-06-16 | 2022-07-05 |  |  |  |  |  |  |  |
| A1810 |  | Blacksmithing 1_st F.Slab | 5d | 2022-06-16 | 2022-06-21 | A1790 | 20.12d | 5.12d | start on or after 2021-12-02 | ebram | حداد [25 h]; مساعد حداد [25 h]; عامل [25 h] | 23,125 |
| A1800 |  | Erect Formworks 1_st F.Slab | 6d | 2022-06-17 | 2022-06-24 | A1790 | 11d | 0d | start on or after 2021-12-02 |  | عامل [30 h]; نجار [30 h]; مساعد نجار [30 h] | 27,750 |
| A1830 |  | Pouring 1_st F.Slab | 1d | 2022-06-27 | 2022-06-27 | A1810, A1800 | 11d | 0d | start on or after 2021-12-02 |  | يوميه البامب [2 يوميه]; يوميه عربيه خرسانه [6 يوميه]; حديد [35 طن]; خشب [336 لوح]; توريد خرسانه مسلحه [336 م3]; مياه [170 م3] | 2,612,000 |
| A1840 |  | Deshuttering Formworks 1_st F.Slab | 6d | 2022-06-28 | 2022-07-05 | A1830 | 50d | 31d | start on or after 2021-12-02 |  | عامل [30 h]; نجار [30 h]; مساعد نجار [30 h] | 27,750 |
|  | 02 | **Finishing Works 1_st.F** |  | 2022-08-18 | 2022-11-01 |  |  |  |  |  |  |  |
| A1860 |  | Brick Works 1_st F | 5d | 2022-08-18 | 2022-08-24 | A1840, A1620 | 19d | 0d | start on or after 2021-12-02 |  | عامل [50 h]; بناء [50 h]; موان [50 h]; طوب اسمنتى [56838 م2] | 1,651,464 |
| A1870 |  | Conch work | 2d | 2022-08-25 | 2022-08-26 | A1860, A1630 | 24d | 3d | start on or after 2021-12-02 |  | موان [20 h]; مبيض [20 h]; عامل [20 h]; رمل [6 م3]; اسمنت [19 طن]; مياه [10 م3] | 60,650 |
| A1880 |  | Erect Primary Electrical Works.1_st F | 5d | 2022-08-25 | 2022-08-31 | A1860, A1640 | 21d | 0d | start on or after 2021-12-02 |  | كهربائى [30 h]; عامل [15 h]; مقطوعيه كهربه [2812500 مقطوعيه] | 2,832,750 |
| A1890 |  | Primary Plumbing Works 1_st F | 7d | 2022-08-31 | 2022-09-08 | A1860, A1650 | 15d | 0d | start on or after 2021-12-02 |  | عامل [42 h]; سباك [42 h]; مقطوعيه سباكه [206250 مقطوعيه] | 237,750 |
| A1900 |  | Plastering Works 1_st F | 5d | 2022-09-09 | 2022-09-15 | A1870, A1880, A1890, A1660 | 15d | 0d | start on or after 2021-12-02 |  | عامل [40 h]; مبيض [40 h]; موان [40 h]; مقطوعيه جبسمبورد [465877 مقطوعيه] | 509,877 |
| A1910 |  | Install Cretal Works 1_st F | 6d | 2022-09-16 | 2022-09-23 | A1900, A1670 | 15d | 0d | start on or after 2021-12-02 |  | مقطوعيه اعمال كريتال [2103912 مقطوعيه] | 2,103,912 |
| A1920 |  | Install Ceramics Works 1_st F | 4d | 2022-09-26 | 2022-09-29 | A1910, A1680 | 15d | 3d | start on or after 2021-12-02 |  | موان [32 h]; مبلط [32 h]; عامل [32 h]; مقطوعيه سيراميك [513660 مقطوعيه] | 548,860 |
| A1930 |  | Painting Works 1_st F | 9d | 2022-10-06 | 2022-10-18 | A1920, A1690 | 11d | 0d | start on or after 2021-12-02 |  | عامل [72 h]; نقاش [72 h]; مقطوعيه دهانات [219044 مقطوعيه] | 273,044 |
| A1940 |  | Alumital Fixtures 1_st F | 4d | 2022-10-19 | 2022-10-24 | A1930, A1700 | 16d | 0d | start on or after 2021-12-02 |  | صنايعى الوميتال [12 h]; عامل [24 h]; مقطوعيه الوميتال [269242 مقطوعيه] | 283,042 |
| A1950 |  | Finishing Plumbing Fixtures 1_st F | 2d | 2022-10-25 | 2022-10-26 | A1940, A1710 | 18d | 1d | start on or after 2021-12-02 |  | سباك [16 h]; عامل [16 h]; مقطوعيه سباكه [206250 مقطوعيه] | 218,250 |
| A1960 |  | Finishing Electrical Fixtures 1_st F | 2d | 2022-10-25 | 2022-10-26 | A1940, A1720 | 18d | 1d | start on or after 2021-12-02 |  | عامل [6 h]; كهربائى [12 h]; مقطوعيه كهربه [2812500 مقطوعيه] | 2,820,600 |
| A1970 |  | Finishing doors and windows Fixtures 1_st F | 3d | 2022-10-25 | 2022-10-27 | A1940, A1730 | 17d | 0d | start on or after 2021-12-02 |  | نجار [15 h]; مساعد نجار [15 h]; مقطوعيه ابواب وشبابيك [248338 مقطوعيه] | 256,963 |
| A1980 |  | Cleaning and Closing 1_st F | 3d | 2022-10-28 | 2022-11-01 | A1950, A1960, A1970, A1740 | 17d | 6d | start on or after 2021-12-02 |  | عامل [36 h] | 12,600 |

| ID | WBS | Activity | Duration | Start | Finish | Predecessors | Total float | Free float | Constraint | Resources | Cost |
| --- | --- | --- | --- | --- | --- | --- | --- | --- | --- | --- | --- |
|  | 40 | **Second Floor Works** |  | 2022-07-01 | 2022-11-14 |  |  |  |  |  |  |
|  | 01 | **Concrete Works 2_nd.F** |  | 2022-07-01 | 2022-08-11 |  |  |  |  |  |  |
|  | 10 | **Reinforced Concrete 2_nd.F Columns** |  | 2022-07-01 | 2022-07-20 |  |  |  |  |  |  |
| A1990 |  | Erect Formworks 3 sides 2_nd F.Col | 4d | 2022-07-01 | 2022-07-06 | A1830 FS+3d | 11d | 0d | start on or after 2021-12-02 | نجار [16 h]; مساعد نجار [16 h]; عامل [16 h] | 14,800 |
| A2000 |  | Blacksmithing 2_nd F.Col | 4d | 2022-07-07 | 2022-07-12 | A1990 | 11d | 0d | start on or after 2021-12-02 | عامل [16 h]; حداد [16 h]; مساعد حداد [16 h] | 14,800 |
| A2010 |  | Close Formworks Fourth side 2_nd F.Col | 2d | 2022-07-13 | 2022-07-14 | A2000 | 11d | 0d | start on or after 2021-12-02 | نجار [8 h]; مساعد نجار [8 h]; عامل [8 h] | 7,400 |
| A2020 |  | Pouring 2_nd F.Col | 1d | 2022-07-15 | 2022-07-15 | A2010 | 11d | 0d | start on or after 2021-12-02 | يوميه البامب [1 يوميه]; يوميه عربيه خرسانه [3 يوميه]; خشب [70 لوح]; مياه [10 م3]; توريد خرسانه مسلحه [70 م3]; حديد [7 طن] | 542,850 |
| A2030 |  | Deshuttering Formworks 2_nd F.Col | 3d | 2022-07-18 | 2022-07-20 | A2020 | 11d | 0d | start on or after 2021-12-02 | عامل [30 h]; نجار [30 h]; مساعد نجار [30 h] | 27,750 |
|  | 20 | **Reinforced Concrete 2_nd.F Slab** |  | 2022-07-21 | 2022-08-11 |  |  |  |  |  |  |
| A2040 |  | Erect Formworks 2_nd F.Slab | 6d | 2022-07-21 | 2022-07-28 | A2030 | 14d | 3d | start on or after 2021-12-02 | نجار [30 h]; مساعد نجار [30 h]; عامل [30 h] | 27,750 |
| A2050 |  | Blacksmithing 2_nd F.Slab | 9d | 2022-07-21 | 2022-08-02 | A2030 | 11d | 0d | start on or after 2021-12-02 | عامل [54 h]; حداد [54 h]; مساعد حداد [54 h] | 49,950 |
| A2070 |  | Pouring 2_nd F.Slab | 1d | 2022-08-03 | 2022-08-03 | A2050, A2040 | 11d | 0d | start on or after 2021-12-02 | يوميه البامب [2 يوميه]; يوميه عربيه خرسانه [9 يوميه]; حديد [34 طن]; خشب [336 لوح]; مياه [170 م3]; توريد خرسانه مسلحه [336 م3] | 2,575,100 |
| A2080 |  | Deshuttering Formworks 2_nd F.Slab | 6d | 2022-08-04 | 2022-08-11 | A2070 | 32d | 9d | start on or after 2021-12-02 | عامل [30 h]; نجار [30 h]; مساعد نجار [30 h] | 27,750 |
|  | 02 | **Finishing Works 2_nd.F** |  | 2022-08-25 | 2022-11-14 |  |  |  |  |  |  |
| A2100 |  | Brick Works 2_nd F | 5d | 2022-08-25 | 2022-08-31 | A2080, A1860 | 23d | 0d | start on or after 2021-12-02 | عامل [50 h]; بناء [50 h]; موان [50 h]; طوب اسمنتى [56838 م2] | 1,651,464 |
| A2110 |  | Conch work | 2d | 2022-09-01 | 2022-09-02 | A2100, A1870 | 28d | 11d | start on or after 2021-12-02 | موان [20 h]; مبيض [20 h]; عامل [20 h]; رمل [6 م3]; اسمنت [19 طن]; مياه [10 م3] | 60,650 |
| A2120 |  | Erect Primary Electrical Works.2_nd F | 5d | 2022-09-01 | 2022-09-07 | A2100, A1880 | 25d | 8d | start on or after 2021-12-02 | عامل [15 h]; كهربائى [30 h]; مقطوعيه كهربه [2812500 مقطوعيه] | 2,832,750 |
| A2130 |  | Primary Plumbing Works 2_nd F | 7d | 2022-09-09 | 2022-09-19 | A2100, A1890 | 17d | 0d | start on or after 2021-12-02 | سباك [42 h]; عامل [42 h]; مقطوعيه سباكه [206250 مقطوعيه] | 237,750 |
| A2140 |  | Plastering Works 2_nd F | 5d | 2022-09-20 | 2022-09-26 | A2110, A2120, A2130, A1900 | 17d | 0d | start on or after 2021-12-02 | مبيض [40 h]; موان [40 h]; عامل [40 h]; مقطوعيه جبسمبورد [465877 مقطوعيه] | 509,877 |
| A2150 |  | Install Cretal Works 2_nd F | 6d | 2022-09-27 | 2022-10-04 | A2140, A1910 | 17d | 0d | start on or after 2021-12-02 | مقطوعيه اعمال كريتال [2103912 مقطوعيه] | 2,103,912 |
| A2160 |  | Install Ceramics Works 2_nd F | 4d | 2022-10-05 | 2022-10-10 | A2150, A1920 | 17d | 6d | start on or after 2021-12-02 | عامل [32 h]; مبلط [32 h]; موان [32 h]; مقطوعيه سيراميك [513660 مقطوعيه] | 548,860 |
| A2170 |  | Painting Works 2_nd F | 9d | 2022-10-19 | 2022-10-31 | A2160, A1930 | 11d | 0d | start on or after 2021-12-02 | عامل [72 h]; نقاش [72 h]; مقطوعيه دهانات [219044 مقطوعيه] | 273,044 |
| A2180 |  | Alumital Fixtures 2_nd F | 4d | 2022-11-01 | 2022-11-04 | A2170, A1940 | 11d | 0d | start on or after 2021-12-02 | عامل [24 h]; صنايعى الوميتال [12 h]; مقطوعيه الوميتال [269242 مقطوعيه] | 283,042 |
| A2190 |  | Finishing Plumbing Fixtures 2_nd F | 2d | 2022-11-07 | 2022-11-08 | A2180, A1950 | 12d | 1d | start on or after 2021-12-02 | سباك [16 h]; عامل [16 h]; مقطوعيه سباكه [206250 مقطوعيه] | 218,250 |
| A2200 |  | Finishing Electrical Fixtures 2_nd F | 2d | 2022-11-07 | 2022-11-08 | A2180, A1960 | 12d | 1d | start on or after 2021-12-02 | كهربائى [12 h]; عامل [6 h]; مقطوعيه كهربه [2812500 مقطوعيه] | 2,820,600 |
| A2210 |  | Finishing doors and windows Fixtures 2_nd F | 3d | 2022-11-07 | 2022-11-09 | A2180, A1970 | 11d | 0d | start on or after 2021-12-02 | نجار [15 h]; مساعد نجار [15 h]; مقطوعيه ابواب وشبابيك [248338 مقطوعيه] | 256,963 |
| A2220 |  | Cleaning and Closing 2_nd F | 3d | 2022-11-10 | 2022-11-14 | A2190, A2200, A2210, A1980 | 11d | 25d | start on or after 2021-12-02 | عامل [36 h] | 12,600 |
